# SRA2021-G11-项目计划v0.0.1

Schedule from MS Project, 2021-03-11 to 2021-06-30, A marks actual dates.

## Calendars

- 项目工作日历: Mon-Sun 19:00-20:00, 20:01-21:01.

## Resources

| Resource |
| --- |
| 黄文涛 |
| 张景雄 |
| 伊君琛 |
| 沈瑞杰 |
| 梅一枝 |
| G11小组 |

## Schedule

| ID | WBS | Task | Type | Duration | Start | Finish | Predecessors | Complete | Remaining | Total slack | Constraint | Resources | Work | Actual work | 最终交付物 |
| --- | --- | --- | --- | --- | --- | --- | --- | --- | --- | --- | --- | --- | --- | --- | --- |
| 1 | 1 | **渔乎APP项目开发** |  | 27.88d? | 2021-03-11 A | 2021-06-30 |  | 13% | 24.17d? | 0d |  |  | 2202h | 292h |  |
| 2 | 1.1 | **前期准备** |  | 2h? | 2021-03-11 A | 2021-03-11 A |  | 100% |  |  |  | G11小组 | 18h | 18h |  |
| 3 | 1.1.1 | 确定小组成员 | milestone | 0d? | 2021-03-11 A | 2021-03-11 A |  | 100% |  |  |  |  |  |  |  |
| 4 | 1.1.2 | G11小组成立 | milestone | 0d? | 2021-03-11 A | 2021-03-11 A |  | 100% |  |  |  |  |  |  |  |
| 5 | 1.1.3 | 确定待开发项目 | milestone | 0d? | 2021-03-11 A | 2021-03-11 A |  | 100% |  |  |  |  |  |  |  |
| 6 | 1.1.4 | G11小组第一次例会 | milestone | 0d? | 2021-03-11 A | 2021-03-11 A |  | 100% |  |  |  |  |  |  |  |
| 7 | 1.1.5 | 软件环境配置 |  | 1d? | 2021-03-11 A | 2021-03-11 A |  | 100% |  |  |  | G11小组 | 8h | 8h |  |
| 8 | 1.1.6 | 确定成员大致分工 |  | 1d? | 2021-03-11 A | 2021-03-11 A |  | 100% |  |  | start no earlier than 2021-03-11 | 黄文涛 | 8h | 8h |  |
| 9 | 1.2 | **可行性分析** |  | 0.25d? | 2021-03-12 A | 2021-03-13 A | 2 | 100% |  |  |  |  | 56h | 56h |  |
| 10 | 1.2.1 | 进一步研究问题 |  | 1d? | 2021-03-12 A | 2021-03-12 A |  | 100% |  |  |  | G11小组 | 8h | 8h |  |
| 11 | 1.2.2 | 经济可行性分析 |  | 1d? | 2021-03-13 A | 2021-03-13 A | 10 | 100% |  |  |  | 沈瑞杰 | 8h | 8h |  |
| 12 | 1.2.3 | 技术可行性分析 |  | 1d? | 2021-03-12 A | 2021-03-12 A |  | 100% |  |  |  | 沈瑞杰 | 8h | 8h |  |
| 13 | 1.2.4 | 操作可行性分析 |  | 1d? | 2021-03-13 A | 2021-03-13 A | 10 | 100% |  |  |  | 伊君琛 | 8h | 8h |  |
| 14 | 1.2.5 | 法律可行性分析 |  | 1d? | 2021-03-12 A | 2021-03-12 A |  | 100% |  |  |  | 伊君琛 | 8h | 8h |  |
| 15 | 1.2.6 | 整合可行性分析报告 | milestone | 1d? | 2021-03-13 A | 2021-03-13 A | 14, 12 | 100% |  |  | start no earlier than 2021-03-13 | 沈瑞杰; 伊君琛 | 16h | 16h | 《可行性分析报告》 |
| 16 | 1.3 | **项目开发计划** |  | 0.25d? | 2021-03-12 A | 2021-03-13 A | 2 | 100% |  |  |  |  | 80h | 80h |  |
| 17 | 1.3.1 | 明确成员分工 |  | 1d? | 2021-03-12 A | 2021-03-12 A | 2 | 100% |  |  |  | 黄文涛 | 8h | 8h |  |
| 18 | 1.3.2 | 编排甘特图 |  | 2d? | 2021-03-12 A | 2021-03-13 A | 2 | 100% |  |  | start no earlier than 2021-03-12 | 梅一枝 | 16h | 16h |  |
| 19 | 1.3.3 | 编写项目开发计划、项目章程 |  | 1d? | 2021-03-12 A | 2021-03-12 A | 2 | 100% |  |  | finish no earlier than 2021-03-12 | 黄文涛; 张景雄 | 16h | 16h |  |
| 20 | 1.3.4 | 风险管理计划 |  | 1d? | 2021-03-12 A | 2021-03-12 A | 2 | 100% |  |  |  | 梅一枝 | 8h | 8h | 《风险管理计划》 |
| 21 | 1.3.5 | 配置管理计划 |  | 1d? | 2021-03-12 A | 2021-03-12 A | 2 | 100% |  |  |  | 梅一枝 | 8h | 8h | 《配置管理计划》 |
| 22 | 1.3.6 | 质量保证计划 |  | 1d? | 2021-03-12 A | 2021-03-12 A | 2 | 100% |  |  |  | 梅一枝 | 8h | 8h | 《质量保证计划》 |
| 23 | 1.3.7 | 整合项目开发计划 | milestone | 1d? | 2021-03-13 A | 2021-03-13 A | 19 | 100% |  |  | start no earlier than 2021-03-13 | 黄文涛; 张景雄 | 16h | 16h | 《项目开发计划》、《项目章程》 |
| 24 | 1.4 | **项目计划阶段整合** |  | 2h? | 2021-03-14 A | 2021-03-14 A | 9, 16 | 100% |  |  |  |  | 40h | 40h |  |
| 25 | 1.4.1 | 文档、甘特图修订 |  | 1d? | 2021-03-14 A | 2021-03-14 A | 16 | 100% |  |  |  | 沈瑞杰; 伊君琛; 张景雄 | 24h | 24h |  |
| 26 | 1.4.2 | ppt制作 |  | 1d? | 2021-03-14 A | 2021-03-14 A | 16 | 100% |  |  |  | 伊君琛 | 8h | 8h |  |
| 27 | 1.4.3 | G11小组例会 |  | 1d? | 2021-03-14 A | 2021-03-14 A | 16 | 100% |  |  |  | G11小组 | 8h | 8h |  |

| ID | WBS | Task | Type | Duration | Start | Finish | Predecessors | Complete | Remaining | Total slack | Free slack | Constraint | Resources | Work | Actual work | 最终交付物 |
| --- | --- | --- | --- | --- | --- | --- | --- | --- | --- | --- | --- | --- | --- | --- | --- | --- |
| 28 | 1.5 | **软件需求分析（延后）** |  | 25.5d? | 2021-03-26 A | 2021-06-30 | 23 | 5% | 24.35d? |  |  |  |  | 1658h | 98h |  |
| 29 | 1.5.1 | **需求第一次迭代** |  | 10.5d? | 2021-03-26 A | 2021-05-07 |  | 12% | 9.19d? | 13.62d | 0.25d |  |  | 740h | 98h |  |
| 30 | 1.5.1.1 | **需求获取** |  | 4.5d? | 2021-03-26 A | 2021-04-13 |  | 46% | 2.42d? | 1d | 0.25d |  |  | 322h | 98h |  |
| 31 | 1.5.1.1.1 | 收集背景资料 |  | 2d | 2021-03-26 A | 2021-03-27 A |  | 100% |  |  |  |  | 伊君琛 | 16h | 16h |  |
| 32 | 1.5.1.1.2 | 定义项目前景和范围 |  | 1d? | 2021-03-28 A | 2021-03-28 A | 31 | 100% |  |  |  |  | 黄文涛; 张景雄 | 16h | 16h |  |
| 33 | 1.5.1.1.3 | **选择信息的来源** |  | 2.75d? | 2021-03-29 A | 2021-04-09 | 32 | 53% | 1.29d? | 0.5d | 0d |  | 梅一枝; 沈瑞杰 | 226h | 58h |  |
| 34 | 1.5.1.1.3.1 | 识别用户群 |  | 1d | 2021-03-29 A | 2021-03-29 A |  | 100% |  |  |  | finish no earlier than 2021-03-17 | 伊君琛 | 8h | 8h |  |
| 35 | 1.5.1.1.3.2 | 确定用户代表 |  | 1d | 2021-03-30 A | 2021-03-30 A | 34 | 100% |  |  |  |  | 伊君琛 | 8h | 8h |  |
| 36 | 1.5.1.1.3.3 | 选择产品代言人 |  | 2h | 2021-03-31 A | 2021-03-31 A | 35 | 100% |  |  |  | start no earlier than 2021-03-31 | 黄文涛 | 2h | 2h |  |
| 37 | 1.5.1.1.3.4 | 识别用户需求（延后） |  | 1d? | 2021-04-08 | 2021-04-08 | 36 |  |  | 0.5d | 0.25d | start no earlier than 2021-04-08 | 黄文涛 | 8h |  |  |
| 38 | 1.5.1.1.3.5 | 识别系统事件和响应(延后) |  | 1d? | 2021-04-09 | 2021-04-09 | 37 |  |  | 0.5d |  | start no earlier than 2021-03-30 | 伊君琛 | 8h |  |  |
| 39 | 1.5.1.1.4 | G11小组例会 |  | 1d? | 2021-03-28 A | 2021-03-28 A |  | 100% |  |  |  | start no earlier than 2021-03-28 | G11小组 | 8h | 8h |  |
| 40 | 1.5.1.1.5 | **选择获取方法，执行获取** |  | 4d? | 2021-04-09 | 2021-04-11 | 33 |  |  |  |  |  |  | 24h |  |  |
| 41 | 1.5.1.1.5.1 | 举行引导式需求获取讨论会 |  | 1d? | 2021-04-09 | 2021-04-09 |  |  |  | 0.75d | 0.25d |  | 黄文涛 | 8h |  |  |
| 42 | 1.5.1.1.5.2 | 观察用户如何完成工作 |  | 1d? | 2021-04-10 | 2021-04-10 | 41 |  |  | 0.75d | 0.25d |  | G11小组 | 8h |  |  |
| 43 | 1.5.1.1.5.3 | 分发调查问卷 |  | 1d? | 2021-04-11 | 2021-04-11 | 42 |  |  | 0.75d | 0.25d |  | G11小组 | 8h |  |  |
| 44 | 1.5.1.1.6 | **记录获取结果** |  | 0.25d? | 2021-04-12 | 2021-04-13 | 40 |  |  | 0.75d | 0.25d |  | 伊君琛 | 32h |  |  |
| 45 | 1.5.1.1.6.1 | 分析文档 |  | 1d? | 2021-04-12 | 2021-04-12 | 43 |  |  | 0.75d | 0.25d |  | 黄文涛 | 8h |  |  |
| 46 | 1.5.1.1.6.2 | 检查问题报告 |  | 1d? | 2021-04-13 | 2021-04-13 | 45 |  |  | 0.75d |  |  | 黄文涛 | 8h |  |  |
| 47 | 1.5.1.1.7 | G11小组例会 |  | 2h | 2021-04-07 | 2021-04-07 |  |  |  | 2.25d |  | start no earlier than 2021-04-07 |  |  |  |  |
| 48 | 1.5.1.2 | **需求分析** |  | 7d? | 2021-04-14 | 2021-04-28 | 44 |  |  |  |  |  |  | 250h |  |  |
| 49 | 1.5.1.2.1 | 背景分析 |  | 1d | 2021-04-14 | 2021-04-14 | 30 |  |  | 0.75d | 0.25d |  | 黄文涛 | 8h |  |  |
| 50 | 1.5.1.2.2 | 确定系统边界 |  | 1d | 2021-04-15 | 2021-04-15 | 49 |  |  | 0.75d | 0.25d |  | 伊君琛 | 8h |  |  |
| 51 | 1.5.1.2.3 | G11小组例会 |  | 1d? | 2021-04-15 | 2021-04-15 | 49 |  |  | 3.25d |  |  | G11小组 | 8h |  |  |
| 52 | 1.5.1.2.4 | 需求建模 |  | 3d | 2021-04-16 | 2021-04-18 | 50 |  |  | 0.75d | 0.25d |  | 伊君琛; 张景雄 | 48h |  |  |
| 53 | 1.5.1.2.5 | G11小组例会 |  | 1d? | 2021-04-14 | 2021-04-14 |  |  |  | 19.25d |  | start no earlier than 2021-04-14 | G11小组 | 8h |  |  |
| 54 | 1.5.1.2.6 | 需求细化 |  | 1d? | 2021-04-19 | 2021-04-19 | 52 |  |  | 0.75d | 0.25d |  | 黄文涛; 伊君琛; 沈瑞杰 | 24h |  |  |
| 55 | 1.5.1.2.7 | 确定优先级 |  | 1d? | 2021-04-20 | 2021-04-20 | 54 |  |  | 0.75d | 0.25d |  | 黄文涛 | 8h |  |  |
| 56 | 1.5.1.2.8 | 需求协商 |  | 2d | 2021-04-21 | 2021-04-22 | 55 |  |  | 0.75d | 0.25d |  | G11小组 | 16h |  |  |
| 57 | 1.5.1.2.9 | G11小组例会 |  | 2h | 2021-04-18 | 2021-04-18 |  |  |  | 1d | 0.25d | start no earlier than 2021-04-18 |  |  |  |  |
| 58 | 1.5.1.2.10 | 数据字典创建 | milestone | 1d? | 2021-04-23 | 2021-04-23 | 56 |  |  | 2.75d |  |  | 黄文涛; 张景雄 | 16h |  | 数据字典 |
| 59 | 1.5.1.2.11 | G11小组例会 |  | 2h | 2021-04-21 | 2021-04-21 |  |  |  | 17.38d |  | start no earlier than 2021-04-21 |  |  |  |  |
| 60 | 1.5.1.2.12 | 原型开发 | milestone | 6d? | 2021-04-23 | 2021-04-28 | 56 |  |  | 0.75d | 0d |  | 梅一枝; 沈瑞杰 | 96h |  | 界面原型 |
| 61 | 1.5.1.2.13 | G11小组例会 |  | 2h | 2021-04-24 | 2021-04-24 |  |  |  | 16.75d |  | start no earlier than 2021-04-24 | G11小组 | 2h |  |  |
| 62 | 1.5.1.2.14 | 原型确认 |  | 1d? | 2021-04-28 | 2021-05-01 | 60 |  |  | 0.75d |  |  |  |  |  |  |
| 63 | 1.5.1.2.15 | 建立子系统 |  | 1d? | 2021-04-23 | 2021-04-23 | 56 |  |  | 2.75d |  |  | 伊君琛 | 8h |  |  |

| ID | WBS | Task | Type | Duration | Start | Finish | Predecessors | Total slack | Free slack | Constraint | Resources | Work | 最终交付物 |
| --- | --- | --- | --- | --- | --- | --- | --- | --- | --- | --- | --- | --- | --- |
| 64 | 1.5.1.3 | **编写需求规格说明书** |  | 32h? | 2021-04-29 | 2021-05-01 | 48 |  |  |  | G11小组 | 32h | 《需求规格说明书》 |
| 65 | 1.5.1.3.1 | 创建需求跟踪能力矩阵 | milestone | 1d? | 2021-04-29 | 2021-04-29 |  | 1.5d |  |  | 黄文涛 | 8h | 《需求跟踪矩阵》 |
| 66 | 1.5.1.4 | **需求验证** |  | 4d? | 2021-05-05 | 2021-05-07 | 64 |  |  |  |  | 56h |  |
| 67 | 1.5.1.4.1 | 测试需求 |  | 1d? | 2021-05-05 | 2021-05-05 |  | 0.25d |  |  | G11小组 | 8h |  |
| 68 | 1.5.1.4.2 | 编写测试用例 | milestone | 1d? | 2021-05-05 | 2021-05-05 | 64 | 0.75d |  |  | 黄文涛 | 8h | 《测试用例》 |
| 69 | 1.5.1.4.3 | 原型修改 |  | 1d? | 2021-05-05 | 2021-05-05 |  | 0.25d |  |  | 梅一枝; 沈瑞杰 | 16h | 界面原型 |
| 70 | 1.5.1.4.4 | 原型确认 |  | 1d? | 2021-05-06 | 2021-05-06 | 69 | 0.25d |  |  | G11小组 | 8h |  |
| 71 | 1.5.1.4.5 | 编写用户手册 | milestone | 1d? | 2021-05-07 | 2021-05-07 | 70 | 0.25d |  |  | 伊君琛; 张景雄 | 16h | 《用户手册》 |
| 72 | 1.5.1.5 | **需求管理** |  | 3.5d? | 2021-04-23 | 2021-05-07 | 56 | 0.25d |  |  |  | 80h |  |
| 73 | 1.5.1.5.1 | **建立需求基线** |  | 3.25d? | 2021-04-23 | 2021-05-06 | 56 | 0.25d |  |  |  | 24h |  |
| 74 | 1.5.1.5.1.1 | 更新需求优先级 |  | 1d? | 2021-04-23 | 2021-04-23 | 56 | 3.5d |  |  | 梅一枝 | 8h |  |
| 75 | 1.5.1.5.1.2 | 工作量估算 |  | 1d? | 2021-04-23 | 2021-04-23 | 56 | 3.5d | 0.25d |  | 黄文涛 | 8h |  |
| 76 | 1.5.1.5.1.3 | 未完成项合并 |  | 1d? | 2021-05-06 | 2021-05-06 | 67 | 0.25d |  |  | 伊君琛 | 8h |  |
| 77 | 1.5.1.5.2 | 建立需求跟踪信息 |  | 1d? | 2021-04-24 | 2021-04-24 | 75 | 3.5d |  |  | 黄文涛 | 8h |  |
| 78 | 1.5.1.5.3 | 后向跟踪 |  | 1d? | 2021-05-06 | 2021-05-06 | 67 | 0.5d |  |  | 沈瑞杰 | 8h |  |
| 79 | 1.5.1.5.4 | 前向跟踪 |  | 1d? | 2021-05-06 | 2021-05-06 | 67 | 0.5d |  |  | 张景雄 | 8h |  |
| 80 | 1.5.1.5.5 | G11小组第十次会议 |  | 1d? | 2021-05-07 | 2021-05-07 | 73 | 0.25d |  |  | G11小组 | 8h |  |
| 81 | 1.5.1.5.6 | **进行变更控制** |  | 0d? | 2021-05-07 | 2021-05-07 | 73 | 0.25d |  |  |  | 24h |  |
| 82 | 1.5.1.5.6.1 | 业务影响分析 |  | 1d? | 2021-05-07 | 2021-05-07 | 73 | 0.25d |  |  | 黄文涛 | 8h |  |
| 83 | 1.5.1.5.6.2 | 技术影响分析 |  | 1d? | 2021-05-07 | 2021-05-07 | 73 | 0.25d |  |  | 沈瑞杰 | 8h |  |
| 84 | 1.5.1.5.6.3 | 项目影响分析 |  | 1d? | 2021-05-07 | 2021-05-07 | 73 | 0.25d |  |  | 张景雄 | 8h |  |
| 85 | 1.5.2 | **需求第二次迭代** |  | 5.75d? | 2021-05-08 | 2021-05-17 | 29 |  |  |  |  | 242h |  |
| 86 | 1.5.2.1 | G11小组例会 |  | 2h | 2021-05-08 | 2021-05-08 |  | 13.25d |  | start no earlier than 2021-05-08 | 黄文涛 | 2h |  |
| 87 | 1.5.2.2 | **需求获取** |  | 2h? | 2021-05-09 | 2021-05-09 |  |  |  |  |  | 8h |  |
| 88 | 1.5.2.2.1 | 用户访谈 |  | 1d? | 2021-05-09 | 2021-05-09 | 72 | 0d |  |  | G11小组 | 8h |  |

| ID | WBS | Task | Type | Duration | Start | Finish | Predecessors | Total slack | Free slack | Constraint | Resources | Work | 最终交付物 |
| --- | --- | --- | --- | --- | --- | --- | --- | --- | --- | --- | --- | --- | --- |
| 89 | 1.5.2.3 | **需求分析** |  | 0.75d? | 2021-05-10 | 2021-05-13 | 87 | 0d |  |  |  | 112h |  |
| 90 | 1.5.2.3.1 | 更新需求建模 |  | 1d? | 2021-05-10 | 2021-05-10 | 88 | 1.25d | 0.5d |  | 张景雄 | 8h |  |
| 91 | 1.5.2.3.2 | 更新需求细化 |  | 2d? | 2021-05-10 | 2021-05-11 | 88 | 0d |  |  | 黄文涛; 伊君琛 | 32h |  |
| 92 | 1.5.2.3.3 | 原型更新 |  | 2d? | 2021-05-10 | 2021-05-11 | 88 | 0.5d |  |  | 梅一枝; 沈瑞杰 | 32h | 界面原型 |
| 93 | 1.5.2.3.4 | 数据字典更新 |  | 2d? | 2021-05-12 | 2021-05-13 | 91, 90 | 1d |  |  | 黄文涛; 张景雄 | 32h | 数据字典 |
| 94 | 1.5.2.3.5 | 子系统更新 |  | 1d? | 2021-05-12 | 2021-05-12 | 91, 90 | 1.25d |  |  | 伊君琛 | 8h |  |
| 95 | 1.5.2.4 | G11小组例会 |  | 1d? | 2021-05-12 | 2021-05-12 | 91, 90 | 1.25d |  |  | G11小组 | 8h |  |
| 96 | 1.5.2.5 | 更新需求规格说明书 | milestone | 2d | 2021-05-12 | 2021-05-13 | 91 | 0d |  |  | G11小组 | 16h | 《需求规格说明书》（修订版） |
| 97 | 1.5.2.6 | **需求验证** |  | 4d? | 2021-05-14 | 2021-05-16 | 96 |  |  |  |  | 56h |  |
| 98 | 1.5.2.6.1 | 测试需求 |  | 2d? | 2021-05-14 | 2021-05-15 | 91 | 0.25d |  |  | G11小组 | 16h |  |
| 99 | 1.5.2.6.2 | 原型修改 |  | 2d? | 2021-05-14 | 2021-05-15 | 92 | 0d |  |  | 梅一枝; 沈瑞杰 | 32h | 界面原型 |
| 100 | 1.5.2.6.3 | 原型确认 |  | 1d? | 2021-05-16 | 2021-05-16 | 99 | 0d |  |  | G11小组 | 8h |  |
| 101 | 1.5.2.7 | **需求管理** |  | 2h? | 2021-05-17 | 2021-05-17 | 97 |  |  |  |  | 40h |  |
| 102 | 1.5.2.7.1 | 更新需求基线 |  | 1d? | 2021-05-17 | 2021-05-17 | 98 | 0d |  |  | 梅一枝 | 8h |  |
| 103 | 1.5.2.7.2 | 更新需求跟踪信息 |  | 1d? | 2021-05-17 | 2021-05-17 | 98 | 0d |  |  | 黄文涛 | 8h |  |
| 104 | 1.5.2.7.3 | 后向跟踪 |  | 1d? | 2021-05-17 | 2021-05-17 | 98 | 0d |  |  | 沈瑞杰 | 8h |  |
| 105 | 1.5.2.7.4 | 前向跟踪 |  | 1d? | 2021-05-17 | 2021-05-17 | 98 | 0d |  |  | 张景雄 | 8h |  |
| 106 | 1.5.2.7.5 | 更新变更控制 |  | 1d? | 2021-05-17 | 2021-05-17 | 98 | 0d |  |  | 伊君琛 | 8h |  |
| 107 | 1.5.3 | **需求第三次迭代** |  | 5.5d? | 2021-05-18 | 2021-05-26 | 85 |  |  |  |  | 226h |  |
| 108 | 1.5.3.1 | **需求获取** |  | 2h? | 2021-05-18 | 2021-05-18 |  |  |  |  |  | 8h |  |
| 109 | 1.5.3.1.1 | 用户访谈 |  | 1d? | 2021-05-18 | 2021-05-18 | 85 | 0.25d |  | start no earlier than 2021-05-18 | G11小组 | 8h |  |
| 110 | 1.5.3.2 | **需求分析** |  | 4.25d? | 2021-05-19 | 2021-05-22 | 108 |  |  |  |  | 98h |  |
| 111 | 1.5.3.2.1 | G11小组例会 |  | 2h | 2021-05-19 | 2021-05-19 |  | 10.5d |  | start no earlier than 2021-05-19 | 黄文涛 | 2h |  |
| 112 | 1.5.3.2.2 | 更新需求建模 |  | 2d? | 2021-05-19 | 2021-05-20 | 109 | 0.25d |  |  | 张景雄 | 16h |  |
| 113 | 1.5.3.2.3 | 更新需求细化 |  | 1d? | 2021-05-19 | 2021-05-19 | 109 | 0.5d |  |  | 伊君琛 | 8h |  |
| 114 | 1.5.3.2.4 | 原型更新 |  | 2d? | 2021-05-19 | 2021-05-20 | 109 | 0.75d |  |  | 梅一枝; 沈瑞杰 | 32h | 界面原型 |
| 115 | 1.5.3.2.5 | 数据字典更新 |  | 2d? | 2021-05-21 | 2021-05-22 | 112, 113 | 0.25d |  |  | 黄文涛; 张景雄 | 32h | 数据字典 |
| 116 | 1.5.3.2.6 | 子系统更新 |  | 1d? | 2021-05-21 | 2021-05-21 | 112, 113 | 0.5d |  |  | 伊君琛 | 8h |  |
| 117 | 1.5.3.3 | G11小组例会 |  | 1d? | 2021-05-21 | 2021-05-21 | 112, 113 | 10d |  | start no earlier than 2021-05-12 | G11小组 | 8h |  |
| 118 | 1.5.3.4 | 更新需求规格说明书 | milestone | 1d? | 2021-05-23 | 2021-05-23 | 110 | 0.75d |  |  | G11小组 | 8h | 《需求规格说明书》（修订版） |

| ID | WBS | Task | Type | Duration | Start | Finish | Predecessors | Total slack | Constraint | Resources | Work | 最终交付物 |
| --- | --- | --- | --- | --- | --- | --- | --- | --- | --- | --- | --- | --- |
| 119 | 1.5.3.5 | **需求验证** |  | 0.5d? | 2021-05-23 | 2021-05-25 | 110 | 0.25d |  |  | 56h |  |
| 120 | 1.5.3.5.1 | 测试需求 |  | 2d? | 2021-05-23 | 2021-05-24 | 113 | 0.25d |  | G11小组 | 16h |  |
| 121 | 1.5.3.5.2 | 原型修改 |  | 2d? | 2021-05-23 | 2021-05-24 | 114 | 0.25d |  | 梅一枝; 沈瑞杰 | 32h | 界面原型 |
| 122 | 1.5.3.5.3 | 原型确认 |  | 1d? | 2021-05-25 | 2021-05-25 | 121 | 0.25d |  | G11小组 | 8h |  |
| 123 | 1.5.3.6 | **需求管理** |  | 0d? | 2021-05-25 | 2021-05-25 | 120 | 0.25d |  |  | 40h |  |
| 124 | 1.5.3.6.1 | 更新需求基线 |  | 1d? | 2021-05-25 | 2021-05-25 | 120 | 0.25d |  | 梅一枝 | 8h |  |
| 125 | 1.5.3.6.2 | 更新需求跟踪信息 |  | 1d? | 2021-05-25 | 2021-05-25 | 120 | 0.25d |  | 黄文涛 | 8h |  |
| 126 | 1.5.3.6.3 | 后向跟踪 |  | 1d? | 2021-05-25 | 2021-05-25 | 120 | 0.25d |  | 沈瑞杰 | 8h |  |
| 127 | 1.5.3.6.4 | 前向跟踪 |  | 1d? | 2021-05-25 | 2021-05-25 | 120 | 0.25d |  | 张景雄 | 8h |  |
| 128 | 1.5.3.6.5 | 更新变更控制 |  | 1d? | 2021-05-25 | 2021-05-25 | 120 | 0.25d |  | 伊君琛 | 8h |  |
| 129 | 1.5.3.7 | G11小组第十六次会议 |  | 1d? | 2021-05-26 | 2021-05-26 | 123 | 8.75d | start no earlier than 2021-05-05 | G11小组 | 8h |  |
| 130 | 1.5.4 | **需求第四次迭代** |  | 5.25d? | 2021-05-27 | 2021-06-03 | 107 |  |  |  | 226h |  |
| 131 | 1.5.4.1 | **需求获取** |  | 2h? | 2021-05-27 | 2021-05-27 |  |  |  |  | 8h |  |
| 132 | 1.5.4.1.1 | 用户访谈 |  | 1d? | 2021-05-27 | 2021-05-27 | 107 | 0d |  | G11小组 | 8h |  |
| 133 | 1.5.4.2 | **需求分析** |  | 1d? | 2021-05-27 | 2021-05-31 | 131 | 0d |  |  | 106h |  |
| 134 | 1.5.4.2.1 | 更新需求建模 |  | 2d? | 2021-05-28 | 2021-05-29 | 132 | 0d |  | 张景雄 | 16h |  |
| 135 | 1.5.4.2.2 | 更新需求细化 |  | 1d? | 2021-05-28 | 2021-05-28 | 132 | 0.25d |  | 黄文涛; 伊君琛 | 16h |  |
| 136 | 1.5.4.2.3 | 原型更新 |  | 2d? | 2021-05-28 | 2021-05-29 | 132 | 0.5d |  | 梅一枝; 沈瑞杰 | 32h | 界面原型 |
| 137 | 1.5.4.2.4 | G11小组例会 |  | 2h | 2021-05-27 | 2021-05-27 |  | 1d | start no earlier than 2021-05-19 | 黄文涛 | 2h |  |
| 138 | 1.5.4.2.5 | 数据字典更新 |  | 2d? | 2021-05-30 | 2021-05-31 | 134, 135 | 0d |  | 黄文涛; 张景雄 | 32h | 数据字典 |
| 139 | 1.5.4.2.6 | 子系统更新 |  | 1d? | 2021-05-30 | 2021-05-30 | 134, 135 | 0.25d |  | 伊君琛 | 8h |  |
| 140 | 1.5.4.3 | 更新需求规格说明书 | milestone | 1d? | 2021-06-01 | 2021-06-01 | 133 | 0.25d |  | G11小组 | 8h | 《需求规格说明书》（修订版） |
| 141 | 1.5.4.4 | **需求验证** |  | 0.5d? | 2021-06-01 | 2021-06-03 | 133 | 0d |  |  | 64h |  |
| 142 | 1.5.4.4.1 | 测试需求 |  | 2d? | 2021-06-01 | 2021-06-02 | 135 | 0d |  | G11小组 | 16h |  |
| 143 | 1.5.4.4.2 | 原型修改 |  | 2d? | 2021-06-01 | 2021-06-02 | 136 | 0d |  | 梅一枝; 沈瑞杰 | 32h | 界面原型 |
| 144 | 1.5.4.4.3 | G11小组例会 |  | 1d? | 2021-06-02 | 2021-06-02 | 140 | 0.25d | start no earlier than 2021-05-12 | 黄文涛 | 8h |  |
| 145 | 1.5.4.4.4 | 原型确认 |  | 1d? | 2021-06-03 | 2021-06-03 | 143 | 0d |  | G11小组 | 8h |  |

| ID | WBS | Task | Type | Duration | Start | Finish | Predecessors | Total slack | Free slack | Constraint | Resources | Work | 最终交付物 |
| --- | --- | --- | --- | --- | --- | --- | --- | --- | --- | --- | --- | --- | --- |
| 146 | 1.5.4.5 | **需求管理** |  | 0d? | 2021-06-03 | 2021-06-03 | 142 | 0d |  |  |  | 40h |  |
| 147 | 1.5.4.5.1 | 更新需求基线 |  | 1d? | 2021-06-03 | 2021-06-03 | 142 | 0d |  |  | 梅一枝 | 8h |  |
| 148 | 1.5.4.5.2 | 更新需求跟踪信息 |  | 1d? | 2021-06-03 | 2021-06-03 | 142 | 0d |  |  | 黄文涛 | 8h |  |
| 149 | 1.5.4.5.3 | 后向跟踪 |  | 1d? | 2021-06-03 | 2021-06-03 | 142 | 0d |  |  | 沈瑞杰 | 8h |  |
| 150 | 1.5.4.5.4 | 前向跟踪 |  | 1d? | 2021-06-03 | 2021-06-03 | 142 | 0d |  |  | 张景雄 | 8h |  |
| 151 | 1.5.4.5.5 | 更新变更控制 |  | 1d? | 2021-06-03 | 2021-06-03 | 142 | 0d |  |  | 伊君琛 | 8h |  |
| 152 | 1.5.5 | **需求第五次迭代** |  | 5.25d? | 2021-06-04 | 2021-06-11 | 130 |  |  |  |  | 224h |  |
| 153 | 1.5.5.1 | **需求获取** |  | 2h? | 2021-06-04 | 2021-06-04 |  |  |  |  |  | 8h |  |
| 154 | 1.5.5.1.1 | 用户访谈 |  | 1d? | 2021-06-04 | 2021-06-04 | 130 | 0.75d | 0.25d |  | G11小组 | 8h |  |
| 155 | 1.5.5.2 | **需求分析** |  | 0.75d? | 2021-06-05 | 2021-06-08 | 153 | 0.75d | 0.25d |  |  | 104h |  |
| 156 | 1.5.5.2.1 | 更新需求建模 |  | 2d? | 2021-06-05 | 2021-06-06 | 154 | 0.75d | 0.25d |  | 张景雄 | 16h |  |
| 157 | 1.5.5.2.2 | 更新需求细化 |  | 1d? | 2021-06-05 | 2021-06-05 | 154 | 1d | 0.5d |  | 伊君琛 | 8h |  |
| 158 | 1.5.5.2.3 | G11小组例会 |  | 1d? | 2021-06-05 | 2021-06-05 | 154 | 1.5d |  | start no earlier than 2021-05-16 | 黄文涛 | 8h |  |
| 159 | 1.5.5.2.4 | 原型更新 |  | 2d? | 2021-06-05 | 2021-06-06 | 154 | 1.25d | 0.75d |  | 梅一枝; 沈瑞杰 | 32h | 界面原型 |
| 160 | 1.5.5.2.5 | 数据字典更新 |  | 2d? | 2021-06-07 | 2021-06-08 | 156, 157 | 0.75d |  |  | 黄文涛; 张景雄 | 32h | 数据字典 |
| 161 | 1.5.5.2.6 | 子系统更新 |  | 1d? | 2021-06-07 | 2021-06-07 | 156, 157 | 1d |  |  | 伊君琛 | 8h |  |
| 162 | 1.5.5.3 | G11小组例会 |  | 1d? | 2021-06-09 | 2021-06-09 | 155 | 1.25d |  |  | 黄文涛 | 8h |  |
| 163 | 1.5.5.4 | 更新需求规格说明书 | milestone | 1d? | 2021-06-09 | 2021-06-09 | 155 | 1.25d |  |  | G11小组 | 8h | 《需求规格说明书》（修订版） |
| 164 | 1.5.5.5 | **需求验证** |  | 0.5d? | 2021-06-09 | 2021-06-11 | 155 | 0.75d |  |  |  | 56h |  |
| 165 | 1.5.5.5.1 | 测试需求 |  | 2d? | 2021-06-09 | 2021-06-10 | 157 | 0.75d | 0.25d |  | G11小组 | 16h |  |
| 166 | 1.5.5.5.2 | 原型修改 |  | 2d? | 2021-06-09 | 2021-06-10 | 159 | 0.75d | 0.25d |  | 梅一枝; 沈瑞杰 | 32h | 界面原型 |
| 167 | 1.5.5.5.3 | 原型确认 |  | 1d? | 2021-06-11 | 2021-06-11 | 166 | 0.75d | 0.25d |  | G11小组 | 8h |  |
| 168 | 1.5.5.6 | **需求管理** |  | 0d? | 2021-06-11 | 2021-06-11 | 165 | 0.75d |  |  |  | 40h |  |
| 169 | 1.5.5.6.1 | 更新需求基线 |  | 1d? | 2021-06-11 | 2021-06-11 | 165 | 0.75d |  |  | 梅一枝 | 8h |  |
| 170 | 1.5.5.6.2 | 跟新需求跟踪信息 |  | 1d? | 2021-06-11 | 2021-06-11 | 165 | 0.75d |  |  | 黄文涛 | 8h |  |
| 171 | 1.5.5.6.3 | 后向跟踪 |  | 1d? | 2021-06-11 | 2021-06-11 | 165 | 0.75d |  |  | 沈瑞杰 | 8h |  |
| 172 | 1.5.5.6.4 | 前向跟踪 |  | 1d? | 2021-06-11 | 2021-06-11 | 165 | 0.75d |  |  | 张景雄 | 8h |  |
| 173 | 1.5.5.6.5 | 更新变更控制 |  | 1d? | 2021-06-11 | 2021-06-11 | 165 | 0.75d |  |  | 伊君琛 | 8h |  |

| ID | WBS | Task | Type | Duration | Start | Finish | Predecessors | Total slack | Free slack | Constraint | Resources | Work | 最终交付物 |
| --- | --- | --- | --- | --- | --- | --- | --- | --- | --- | --- | --- | --- | --- |
| 174 | 1.6 | **设计与开发阶段** |  | 2d? | 2021-06-12 | 2021-06-20 | 152 | 0.75d |  |  |  | 226h |  |
| 175 | 1.6.1 | **需求变更（延期概要设计）** |  | 1d? | 2021-06-12 | 2021-06-16 |  | 0.75d | 0.25d |  |  | 114h |  |
| 176 | 1.6.1.1 | 访谈确认变更点 |  | 1d? | 2021-06-12 | 2021-06-12 | 167 | 0.75d | 0.25d |  | G11小组 | 8h |  |
| 177 | 1.6.1.2 | G11小组例会 |  | 2h | 2021-06-12 | 2021-06-12 |  | 1.75d |  | finish no earlier than 2021-06-02 | 黄文涛 | 2h |  |
| 178 | 1.6.1.3 | 导入需求至需求管理工具 |  | 1d? | 2021-06-13 | 2021-06-13 | 176 | 0.75d | 0.25d |  | 黄文涛 | 8h |  |
| 179 | 1.6.1.4 | 需求影响分析报告 | milestone | 2d | 2021-06-13 | 2021-06-14 | 176 | 1.25d |  |  | 伊君琛; 张景雄 | 32h | 《需求分析报告》 |
| 180 | 1.6.1.5 | 导入界面原型至需求管理工具 |  | 1d? | 2021-06-13 | 2021-06-13 | 176 | 0.75d | 0.25d |  | 梅一枝; 沈瑞杰 | 16h |  |
| 181 | 1.6.1.6 | 导入测试用例至需求管理工具 |  | 1d? | 2021-06-13 | 2021-06-13 | 176 | 0.75d | 0.25d |  | 张景雄 | 8h |  |
| 182 | 1.6.1.7 | 需求管理工具中评价工作量 |  | 1d? | 2021-06-14 | 2021-06-14 | 178, 180, 181 | 0.75d | 0.25d |  | 伊君琛 | 8h |  |
| 183 | 1.6.1.8 | 访谈确认变更 |  | 1d? | 2021-06-15 | 2021-06-15 | 182 | 0.75d | 0.25d |  | G11小组 | 8h |  |
| 184 | 1.6.1.9 | G11小组例会 |  | 1d? | 2021-06-16 | 2021-06-16 | 183 | 0.75d |  |  | 黄文涛 | 8h |  |
| 185 | 1.6.1.10 | 修订文档 | milestone | 1d? | 2021-06-16 | 2021-06-16 | 183 | 0.75d | 0.25d |  | 伊君琛; 张景雄 | 16h |  |
| 186 | 1.6.2 | **概要设计** |  | 0.5d? | 2021-06-17 | 2021-06-19 | 175 | 0.75d |  |  |  | 56h |  |
| 187 | 1.6.2.1 | 设计数据库 |  | 1d? | 2021-06-17 | 2021-06-17 | 185 | 0.75d | 0.25d |  | 黄文涛 | 8h | 《数据库设计说明》 |
| 188 | 1.6.2.2 | 体系结构设计 |  | 1d? | 2021-06-17 | 2021-06-17 | 185 | 0.75d | 0.25d |  | 伊君琛; 张景雄 | 16h |  |
| 189 | 1.6.2.3 | 编写概要设计文档 | milestone | 2d? | 2021-06-18 | 2021-06-19 | 187, 188 | 2.75d |  |  | 梅一枝 | 16h | 《概要设计》 |
| 190 | 1.6.2.4 | 编写测试计划 |  | 2d? | 2021-06-18 | 2021-06-19 | 187, 188 | 2.75d |  |  | 沈瑞杰 | 16h | 《测试计划》 |
| 191 | 1.6.3 | **详细设计** |  | 0.25d? | 2021-06-18 | 2021-06-19 | 185 | 0.75d | 0.25d |  |  | 40h |  |
| 192 | 1.6.3.1 | 编写接口文档 | milestone | 1d? | 2021-06-18 | 2021-06-18 | 187, 188 | 1d |  |  | 黄文涛 | 8h | 《接口设计》 |
| 193 | 1.6.3.2 | 编写详细设计文档 |  | 2d? | 2021-06-18 | 2021-06-19 | 187, 188 | 0.75d |  |  | 伊君琛; 张景雄 | 32h | 《详细设计》 |
| 194 | 1.6.4 | G11小组例会 |  | 1d? | 2021-06-12 | 2021-06-12 |  | 4.5d |  | start no earlier than 2021-06-09 | 黄文涛 | 8h |  |
| 195 | 1.6.5 | 整合设计文档 | milestone | 1d? | 2021-06-20 | 2021-06-20 | 191 | 0.75d | 0d | start no earlier than 2021-06-09 | G11小组 | 8h | 《项目设计报告》 |
| 196 | 1.7 | **实现、测试阶段** |  | 4.75d? | 2021-06-15 | 2021-06-20 | 195 |  |  |  |  | 116h |  |
| 197 | 1.7.1 | 客户端编码 |  | 2d? | 2021-06-21 | 2021-06-22 | 195 | 0.75d | 0.25d |  | 梅一枝; 沈瑞杰 | 32h |  |
| 198 | 1.7.2 | 后端编码 |  | 2d? | 2021-06-21 | 2021-06-22 | 195 | 0.75d | 0.25d |  | 黄文涛; 张景雄 | 32h |  |
| 199 | 1.7.3 | 管理员端编码 |  | 2d? | 2021-06-21 | 2021-06-22 | 195 | 0.75d | 0.25d |  | 伊君琛 | 16h |  |
| 200 | 1.7.4 | G11小组例会 |  | 2h | 2021-06-16 | 2021-06-16 |  | 3.5d |  | start no earlier than 2021-06-16 | G11小组 | 2h |  |
| 201 | 1.7.5 | 单元测试 |  | 2d | 2021-06-23 | 2021-06-24 | 197, 198, 199 | 0.75d | 0.25d |  | G11小组 | 16h |  |
| 202 | 1.7.6 | 集成测试 |  | 2d | 2021-06-25 | 2021-06-26 | 201 | 0.75d |  |  | G11小组 | 16h |  |
| 203 | 1.7.7 | G11小组例会 |  | 2h | 2021-06-20 | 2021-06-20 |  | 2.5d |  | start no earlier than 2021-06-20 | 黄文涛 | 2h |  |
| 204 | 1.8 | 项目收尾 | milestone | 1d? | 2021-06-21 | 2021-06-21 | 196 | 2.25d |  |  | G11小组 | 8h |  |
