# SRA2021-G11-项目计划v0.0.1

Schedule from MS Project, 2021-03-11 to 2021-06-30, A marks actual dates.

## Calendars

- 项目工作日历: Mon-Sun 19:00-20:00, 20:01-21:01.

## Resources

| Resource |
| --- |
| 黄文涛 |
| 张景雄 |
| 伊君琛 |
| 沈瑞杰 |
| 梅一枝 |
| G11小组 |

## Schedule

| ID | WBS | Task | Type | Duration | Start | Finish | Predecessors | Complete | Remaining | Total slack | Constraint | Resources | Work | Actual work | 最终交付物 |
| --- | --- | --- | --- | --- | --- | --- | --- | --- | --- | --- | --- | --- | --- | --- | --- |
| 1 | 1 | **渔乎APP项目开发** |  | 27.88d? | 2021-03-11 A | 2021-06-30 |  | 18% | 22.75d? | 0d |  |  | 2292h | 614h |  |
| 2 | 1.1 | **前期准备** |  | 2h? | 2021-03-11 A | 2021-03-11 A |  | 100% |  |  |  | G11小组 | 18h | 18h |  |
| 3 | 1.1.1 | 确定小组成员 | milestone | 0d? | 2021-03-11 A | 2021-03-11 A |  | 100% |  |  |  |  |  |  |  |
| 4 | 1.1.2 | G11小组成立 | milestone | 0d? | 2021-03-11 A | 2021-03-11 A |  | 100% |  |  |  |  |  |  |  |
| 5 | 1.1.3 | 确定待开发项目 | milestone | 0d? | 2021-03-11 A | 2021-03-11 A |  | 100% |  |  |  |  |  |  |  |
| 6 | 1.1.4 | G11小组第一次例会 | milestone | 0d? | 2021-03-11 A | 2021-03-11 A |  | 100% |  |  |  |  |  |  |  |
| 7 | 1.1.5 | 软件环境配置 |  | 1d? | 2021-03-11 A | 2021-03-11 A |  | 100% |  |  |  | G11小组 | 8h | 8h |  |
| 8 | 1.1.6 | 确定成员大致分工 |  | 1d? | 2021-03-11 A | 2021-03-11 A |  | 100% |  |  | start no earlier than 2021-03-11 | 黄文涛 | 8h | 8h |  |
| 9 | 1.2 | **可行性分析** |  | 0.25d? | 2021-03-12 A | 2021-03-13 A | 2 | 100% |  |  |  |  | 56h | 56h |  |
| 10 | 1.2.1 | 进一步研究问题 |  | 1d? | 2021-03-12 A | 2021-03-12 A |  | 100% |  |  |  | G11小组 | 8h | 8h |  |
| 11 | 1.2.2 | 经济可行性分析 |  | 1d? | 2021-03-13 A | 2021-03-13 A | 10 | 100% |  |  |  | 沈瑞杰 | 8h | 8h |  |
| 12 | 1.2.3 | 技术可行性分析 |  | 1d? | 2021-03-12 A | 2021-03-12 A |  | 100% |  |  |  | 沈瑞杰 | 8h | 8h |  |
| 13 | 1.2.4 | 操作可行性分析 |  | 1d? | 2021-03-13 A | 2021-03-13 A | 10 | 100% |  |  |  | 伊君琛 | 8h | 8h |  |
| 14 | 1.2.5 | 法律可行性分析 |  | 1d? | 2021-03-12 A | 2021-03-12 A |  | 100% |  |  |  | 伊君琛 | 8h | 8h |  |
| 15 | 1.2.6 | 整合可行性分析报告 | milestone | 1d? | 2021-03-13 A | 2021-03-13 A | 14, 12 | 100% |  |  | start no earlier than 2021-03-13 | 沈瑞杰; 伊君琛 | 16h | 16h | 《可行性分析报告》 |
| 16 | 1.3 | **项目开发计划** |  | 0.25d? | 2021-03-12 A | 2021-03-13 A | 2 | 100% |  |  |  |  | 90h | 90h |  |
| 17 | 1.3.1 | 明确成员分工 |  | 1d? | 2021-03-12 A | 2021-03-12 A | 2 | 100% |  |  |  | 黄文涛 | 8h | 8h |  |
| 18 | 1.3.2 | 编排甘特图 |  | 2d? | 2021-03-12 A | 2021-03-13 A | 2 | 100% |  |  | start no earlier than 2021-03-12 | 梅一枝 | 16h | 16h |  |
| 19 | 1.3.3 | 编写项目开发计划、项目章程 |  | 1d? | 2021-03-12 A | 2021-03-12 A | 2 | 100% |  |  | finish no earlier than 2021-03-12 | 黄文涛; 张景雄 | 16h | 16h |  |
| 20 | 1.3.4 | 风险管理计划 |  | 1d? | 2021-03-12 A | 2021-03-12 A | 2 | 100% |  |  |  | 梅一枝 | 8h | 8h | 《风险管理计划》 |
| 21 | 1.3.5 | 配置管理计划 |  | 1d? | 2021-03-12 A | 2021-03-12 A | 2 | 100% |  |  |  | 梅一枝 | 8h | 8h | 《配置管理计划》 |
| 22 | 1.3.6 | 质量保证计划 |  | 1d? | 2021-03-12 A | 2021-03-12 A | 2 | 100% |  |  |  | 梅一枝 | 8h | 8h | 《质量保证计划》 |
| 23 | 1.3.7 | 沟通管理计划 |  | 2h | 2021-03-12 A | 2021-03-12 A | 2 | 100% |  |  | start no earlier than 2021-03-12 | 梅一枝 | 2h | 2h | 《沟通管理计划》 |
| 24 | 1.3.8 | 成本管理计划 |  | 2h | 2021-03-12 A | 2021-03-12 A | 2 | 100% |  |  | start no earlier than 2021-03-12 | 梅一枝 | 2h | 2h | 《成本管理计划》 |
| 25 | 1.3.9 | 资源管理计划 |  | 2h | 2021-03-12 A | 2021-03-12 A | 2 | 100% |  |  | start no earlier than 2021-03-12 | 沈瑞杰 | 2h | 2h | 《资源管理计划》 |
| 26 | 1.3.10 | 采购管理计划 |  | 2h | 2021-03-12 A | 2021-03-12 A | 2 | 100% |  |  | start no earlier than 2021-03-12 | 沈瑞杰 | 2h | 2h | 《采购管理计划》 |
| 27 | 1.3.11 | 范围管理计划 |  | 2h | 2021-03-12 A | 2021-03-12 A | 2 | 100% |  |  | start no earlier than 2021-03-12 | 沈瑞杰 | 2h | 2h | 《范围管理计划》 |
| 28 | 1.3.12 | 整合项目开发计划 | milestone | 1d? | 2021-03-13 A | 2021-03-13 A | 19 | 100% |  |  | start no earlier than 2021-03-13 | 黄文涛; 张景雄 | 16h | 16h | 《项目开发计划》、《项目章程》 |

| ID | WBS | Task | Duration | Start | Finish | Predecessors | Complete | Remaining | Total slack | Free slack | Constraint | Resources | Work | Actual work |
| --- | --- | --- | --- | --- | --- | --- | --- | --- | --- | --- | --- | --- | --- | --- |
| 29 | 1.4 | **项目计划阶段整合** | 2h? | 2021-03-14 A | 2021-03-14 A | 9, 16 | 100% |  |  |  |  |  | 40h | 40h |
| 30 | 1.4.1 | 文档、甘特图修订 | 1d? | 2021-03-14 A | 2021-03-14 A | 16 | 100% |  |  |  |  | 沈瑞杰; 伊君琛; 张景雄 | 24h | 24h |
| 31 | 1.4.2 | ppt制作 | 1d? | 2021-03-14 A | 2021-03-14 A | 16 | 100% |  |  |  |  | 伊君琛 | 8h | 8h |
| 32 | 1.4.3 | G11小组例会 | 1d? | 2021-03-14 A | 2021-03-14 A | 16 | 100% |  |  |  |  | G11小组 | 8h | 8h |
| 33 | 1.5 | **软件需求分析（延后）** | 25.5d? | 2021-03-26 A | 2021-06-30 | 28 | 11% | 22.76d? |  |  |  |  | 1738h | 410h |
| 34 | 1.5.1 | **需求第一次迭代** | 10.5d? | 2021-03-26 A | 2021-05-07 |  | 30% | 7.37d? | 13.62d | 0.25d |  |  | 820h | 410h |
| 35 | 1.5.1.1 | **需求获取** | 6d? | 2021-03-26 A | 2021-04-19 A |  | 100% |  |  |  |  |  | 410h | 410h |
| 36 | 1.5.1.1.1 | 收集背景资料 | 2d | 2021-03-26 A | 2021-03-27 A |  | 100% |  |  |  |  | 伊君琛 | 16h | 16h |
| 37 | 1.5.1.1.2 | 定义项目前景和范围 | 1d? | 2021-03-28 A | 2021-03-28 A | 36 | 100% |  |  |  |  | 黄文涛; 张景雄 | 16h | 16h |
| 38 | 1.5.1.1.3 | **选择信息的来源** | 4d? | 2021-03-29 A | 2021-04-14 A | 37 | 100% |  |  |  |  | 梅一枝; 沈瑞杰 | 314h | 314h |
| 39 | 1.5.1.1.3.1 | 识别用户群 | 1d | 2021-03-29 A | 2021-03-29 A |  | 100% |  |  |  | finish no earlier than 2021-03-17 | 伊君琛 | 8h | 8h |
| 40 | 1.5.1.1.3.2 | 确定用户代表 | 1d | 2021-03-30 A | 2021-03-30 A | 39 | 100% |  |  |  |  | 伊君琛 | 8h | 8h |
| 41 | 1.5.1.1.3.3 | 选择产品代言人 | 2h | 2021-03-31 A | 2021-03-31 A | 40 | 100% |  |  |  | start no earlier than 2021-03-31 | 黄文涛 | 2h | 2h |
| 42 | 1.5.1.1.3.4 | 识别直接用户需求（延后） | 1d? | 2021-04-13 A | 2021-04-13 A | 41 | 100% |  |  |  | start no earlier than 2021-04-13 | 黄文涛 | 8h | 8h |
| 43 | 1.5.1.1.3.5 | G11小组例会 | 1d? | 2021-04-14 A | 2021-04-14 A |  | 100% |  |  |  | start no earlier than 2021-04-14 | G11小组 | 8h | 8h |
| 44 | 1.5.1.1.3.6 | 识别系统事件和响应(延后) | 1d? | 2021-04-14 A | 2021-04-14 A | 42 | 100% |  |  |  | start no earlier than 2021-03-30 | 沈瑞杰 | 8h | 8h |
| 45 | 1.5.1.1.4 | G11小组例会 | 1d? | 2021-03-28 A | 2021-03-28 A |  | 100% |  |  |  | start no earlier than 2021-03-28 | G11小组 | 8h | 8h |
| 46 | 1.5.1.1.5 | **选择获取方法，执行获取** | 4d? | 2021-04-15 A | 2021-04-17 A | 38 | 100% |  |  |  |  |  | 24h | 24h |
| 47 | 1.5.1.1.5.1 | 识别管理员需求 | 1d? | 2021-04-15 A | 2021-04-15 A |  | 100% |  |  |  |  | 黄文涛 | 8h | 8h |
| 48 | 1.5.1.1.5.2 | 观察用户如何完成工作 | 1d? | 2021-04-16 A | 2021-04-16 A | 47 | 100% |  |  |  |  | G11小组 | 8h | 8h |
| 49 | 1.5.1.1.5.3 | 分发调查问卷 | 1d? | 2021-04-17 A | 2021-04-17 A | 48 | 100% |  |  |  |  | G11小组 | 8h | 8h |
| 50 | 1.5.1.1.6 | **记录获取结果** | 0.25d? | 2021-04-18 A | 2021-04-19 A | 46 | 100% |  |  |  |  | 伊君琛 | 32h | 32h |
| 51 | 1.5.1.1.6.1 | 分析文档 | 1d? | 2021-04-18 A | 2021-04-18 A | 49 | 100% |  |  |  |  | 黄文涛 | 8h | 8h |
| 52 | 1.5.1.1.6.2 | 检查问题报告 | 1d? | 2021-04-19 A | 2021-04-19 A | 51 | 100% |  |  |  |  | 黄文涛 | 8h | 8h |
| 53 | 1.5.1.1.7 | G11小组例会 | 2h | 2021-04-07 A | 2021-04-07 A |  | 100% |  |  |  | start no earlier than 2021-04-07 |  |  |  |

| ID | WBS | Task | Type | Duration | Start | Finish | Predecessors | Complete | Remaining | Actual start | Total slack | Free slack | Constraint | Resources | Work | 最终交付物 |
| --- | --- | --- | --- | --- | --- | --- | --- | --- | --- | --- | --- | --- | --- | --- | --- | --- |
| 54 | 1.5.1.2 | **需求分析** |  | 6d? | 2021-04-19 | 2021-04-29 | 50 | 1% | 5.92d? | 2021-04-18 |  |  |  |  | 242h |  |
| 55 | 1.5.1.2.1 | 背景分析 |  | 1d | 2021-04-20 | 2021-04-20 | 35 |  |  |  | -0.75d | 0d |  | 黄文涛 | 8h |  |
| 56 | 1.5.1.2.2 | 确定系统边界 |  | 1d | 2021-04-21 | 2021-04-21 | 55 |  |  |  | -0.75d | 0d |  | 伊君琛 | 8h |  |
| 57 | 1.5.1.2.3 | G11小组例会 |  | 1d? | 2021-04-21 | 2021-04-21 | 55 |  |  |  | 3.25d |  |  | G11小组 | 8h |  |
| 58 | 1.5.1.2.4 | 需求建模 |  | 3d | 2021-04-22 | 2021-04-24 | 56 |  |  |  | -0.75d | 0d |  | 伊君琛; 张景雄 | 48h |  |
| 59 | 1.5.1.2.5 | 需求细化 |  | 1d? | 2021-04-25 | 2021-04-25 | 58 |  |  |  | -0.75d | 0d |  | 黄文涛; 伊君琛; 沈瑞杰 | 24h |  |
| 60 | 1.5.1.2.6 | 确定优先级 |  | 1d? | 2021-04-26 | 2021-04-26 | 59 |  |  |  | -0.75d | 0d |  | 黄文涛 | 8h |  |
| 61 | 1.5.1.2.7 | 需求协商 |  | 2d | 2021-04-27 | 2021-04-28 | 60 |  |  |  | -0.75d | 0d |  | G11小组 | 16h |  |
| 62 | 1.5.1.2.8 | G11小组例会 |  | 2h | 2021-04-18 A | 2021-04-18 A |  | 100% |  |  |  |  | start no earlier than 2021-04-18 |  |  |  |
| 63 | 1.5.1.2.9 | 数据字典创建 | milestone | 1d? | 2021-04-29 | 2021-04-29 | 61 |  |  |  | 1.25d |  |  | 黄文涛; 张景雄 | 16h | 数据字典 |
| 64 | 1.5.1.2.10 | G11小组例会 |  | 2h | 2021-04-21 | 2021-04-21 |  |  |  |  | 17.38d |  | start no earlier than 2021-04-21 |  |  |  |
| 65 | 1.5.1.2.11 | 原型开发 | milestone | 6d? | 2021-04-29 | 2021-05-04 | 61 |  |  |  | -0.75d | 0d |  | 梅一枝; 沈瑞杰 | 96h | 界面原型 |
| 66 | 1.5.1.2.12 | G11小组例会 |  | 2h | 2021-04-24 | 2021-04-24 |  |  |  |  | 16.75d |  | start no earlier than 2021-04-24 | G11小组 | 2h |  |
| 67 | 1.5.1.2.13 | 原型确认 |  | 0.25d? | 2021-05-06 | 2021-05-07 | 65 |  |  |  | 13.62d |  | finish no earlier than 2021-05-07 |  |  |  |
| 68 | 1.5.1.2.14 | 建立子系统 |  | 1d? | 2021-04-29 | 2021-04-29 | 61 |  |  |  | 1.25d |  |  | 伊君琛 | 8h |  |
| 69 | 1.5.1.3 | **编写需求规格说明书** |  | 32h? | 2021-04-29 | 2021-05-01 | 54 |  |  |  |  |  |  | G11小组 | 32h | 《需求规格说明书》 |
| 70 | 1.5.1.3.1 | 创建需求跟踪能力矩阵 | milestone | 1d? | 2021-04-29 | 2021-04-29 |  |  |  |  | 1.5d |  |  | 黄文涛 | 8h | 《需求跟踪矩阵》 |
| 71 | 1.5.1.4 | **需求验证** |  | 4d? | 2021-05-05 | 2021-05-07 | 69 |  |  |  |  |  |  |  | 56h |  |
| 72 | 1.5.1.4.1 | 测试需求 |  | 1d? | 2021-05-05 | 2021-05-05 |  |  |  |  | 0.25d |  |  | G11小组 | 8h |  |
| 73 | 1.5.1.4.2 | 编写测试用例 | milestone | 1d? | 2021-05-05 | 2021-05-05 | 69 |  |  |  | 0.75d |  |  | 黄文涛 | 8h | 《测试用例》 |
| 74 | 1.5.1.4.3 | 原型修改 |  | 1d? | 2021-05-05 | 2021-05-05 |  |  |  |  | 0.25d |  |  | 梅一枝; 沈瑞杰 | 16h | 界面原型 |
| 75 | 1.5.1.4.4 | 原型确认 |  | 1d? | 2021-05-06 | 2021-05-06 | 74 |  |  |  | 0.25d |  |  | G11小组 | 8h |  |
| 76 | 1.5.1.4.5 | 编写用户手册 | milestone | 1d? | 2021-05-07 | 2021-05-07 | 75 |  |  |  | 0.25d |  |  | 伊君琛; 张景雄 | 16h | 《用户手册》 |
| 77 | 1.5.1.5 | **需求管理** |  | 2d? | 2021-04-29 | 2021-05-07 | 61 |  |  |  | 0.25d |  |  |  | 80h |  |
| 78 | 1.5.1.5.1 | **建立需求基线** |  | 1.75d? | 2021-04-29 | 2021-05-06 | 61 |  |  |  | 0.25d |  |  |  | 24h |  |
| 79 | 1.5.1.5.1.1 | 更新需求优先级 |  | 1d? | 2021-04-29 | 2021-04-29 | 61 |  |  |  | 2d |  |  | 梅一枝 | 8h |  |
| 80 | 1.5.1.5.1.2 | 工作量估算 |  | 1d? | 2021-04-29 | 2021-04-29 | 61 |  |  |  | 2d | 0.25d |  | 黄文涛 | 8h |  |
| 81 | 1.5.1.5.1.3 | 未完成项合并 |  | 1d? | 2021-05-06 | 2021-05-06 | 72 |  |  |  | 0.25d |  |  | 伊君琛 | 8h |  |
| 82 | 1.5.1.5.2 | 建立需求跟踪信息 |  | 1d? | 2021-04-30 | 2021-04-30 | 80 |  |  |  | 2d |  |  | 黄文涛 | 8h |  |
| 83 | 1.5.1.5.3 | 后向跟踪 |  | 1d? | 2021-05-06 | 2021-05-06 | 72 |  |  |  | 0.5d |  |  | 沈瑞杰 | 8h |  |
| 84 | 1.5.1.5.4 | 前向跟踪 |  | 1d? | 2021-05-06 | 2021-05-06 | 72 |  |  |  | 0.5d |  |  | 张景雄 | 8h |  |
| 85 | 1.5.1.5.5 | G11小组第十次会议 |  | 1d? | 2021-05-07 | 2021-05-07 | 78 |  |  |  | 0.25d |  |  | G11小组 | 8h |  |

| ID | WBS | Task | Type | Duration | Start | Finish | Predecessors | Total slack | Free slack | Constraint | Resources | Work | 最终交付物 |
| --- | --- | --- | --- | --- | --- | --- | --- | --- | --- | --- | --- | --- | --- |
| 86 | 1.5.1.5.6 | **进行变更控制** |  | 0d? | 2021-05-07 | 2021-05-07 | 78 | 0.25d |  |  |  | 24h |  |
| 87 | 1.5.1.5.6.1 | 业务影响分析 |  | 1d? | 2021-05-07 | 2021-05-07 | 78 | 0.25d |  |  | 黄文涛 | 8h |  |
| 88 | 1.5.1.5.6.2 | 技术影响分析 |  | 1d? | 2021-05-07 | 2021-05-07 | 78 | 0.25d |  |  | 沈瑞杰 | 8h |  |
| 89 | 1.5.1.5.6.3 | 项目影响分析 |  | 1d? | 2021-05-07 | 2021-05-07 | 78 | 0.25d |  |  | 张景雄 | 8h |  |
| 90 | 1.5.2 | **需求第二次迭代** |  | 5.75d? | 2021-05-08 | 2021-05-17 | 34 |  |  |  |  | 242h |  |
| 91 | 1.5.2.1 | G11小组例会 |  | 2h | 2021-05-08 | 2021-05-08 |  | 13.25d |  | start no earlier than 2021-05-08 | 黄文涛 | 2h |  |
| 92 | 1.5.2.2 | **需求获取** |  | 2h? | 2021-05-09 | 2021-05-09 |  |  |  |  |  | 8h |  |
| 93 | 1.5.2.2.1 | 用户访谈 |  | 1d? | 2021-05-09 | 2021-05-09 | 77 | 0d |  |  | G11小组 | 8h |  |
| 94 | 1.5.2.3 | **需求分析** |  | 0.75d? | 2021-05-10 | 2021-05-13 | 92 | 0d |  |  |  | 112h |  |
| 95 | 1.5.2.3.1 | 更新需求建模 |  | 1d? | 2021-05-10 | 2021-05-10 | 93 | 1.25d | 0.5d |  | 张景雄 | 8h |  |
| 96 | 1.5.2.3.2 | 更新需求细化 |  | 2d? | 2021-05-10 | 2021-05-11 | 93 | 0d |  |  | 黄文涛; 伊君琛 | 32h |  |
| 97 | 1.5.2.3.3 | 原型更新 |  | 2d? | 2021-05-10 | 2021-05-11 | 93 | 0.5d |  |  | 梅一枝; 沈瑞杰 | 32h | 界面原型 |
| 98 | 1.5.2.3.4 | 数据字典更新 |  | 2d? | 2021-05-12 | 2021-05-13 | 96, 95 | 1d |  |  | 黄文涛; 张景雄 | 32h | 数据字典 |
| 99 | 1.5.2.3.5 | 子系统更新 |  | 1d? | 2021-05-12 | 2021-05-12 | 96, 95 | 1.25d |  |  | 伊君琛 | 8h |  |
| 100 | 1.5.2.4 | G11小组例会 |  | 1d? | 2021-05-12 | 2021-05-12 | 96, 95 | 1.25d |  |  | G11小组 | 8h |  |
| 101 | 1.5.2.5 | 更新需求规格说明书 | milestone | 2d | 2021-05-12 | 2021-05-13 | 96 | 0d |  |  | G11小组 | 16h | 《需求规格说明书》（修订版） |
| 102 | 1.5.2.6 | **需求验证** |  | 4d? | 2021-05-14 | 2021-05-16 | 101 |  |  |  |  | 56h |  |
| 103 | 1.5.2.6.1 | 测试需求 |  | 2d? | 2021-05-14 | 2021-05-15 | 96 | 0.25d |  |  | G11小组 | 16h |  |
| 104 | 1.5.2.6.2 | 原型修改 |  | 2d? | 2021-05-14 | 2021-05-15 | 97 | 0d |  |  | 梅一枝; 沈瑞杰 | 32h | 界面原型 |
| 105 | 1.5.2.6.3 | 原型确认 |  | 1d? | 2021-05-16 | 2021-05-16 | 104 | 0d |  |  | G11小组 | 8h |  |
| 106 | 1.5.2.7 | **需求管理** |  | 2h? | 2021-05-17 | 2021-05-17 | 102 |  |  |  |  | 40h |  |
| 107 | 1.5.2.7.1 | 更新需求基线 |  | 1d? | 2021-05-17 | 2021-05-17 | 103 | 0d |  |  | 梅一枝 | 8h |  |
| 108 | 1.5.2.7.2 | 更新需求跟踪信息 |  | 1d? | 2021-05-17 | 2021-05-17 | 103 | 0d |  |  | 黄文涛 | 8h |  |
| 109 | 1.5.2.7.3 | 后向跟踪 |  | 1d? | 2021-05-17 | 2021-05-17 | 103 | 0d |  |  | 沈瑞杰 | 8h |  |
| 110 | 1.5.2.7.4 | 前向跟踪 |  | 1d? | 2021-05-17 | 2021-05-17 | 103 | 0d |  |  | 张景雄 | 8h |  |
| 111 | 1.5.2.7.5 | 更新变更控制 |  | 1d? | 2021-05-17 | 2021-05-17 | 103 | 0d |  |  | 伊君琛 | 8h |  |

| ID | WBS | Task | Type | Duration | Start | Finish | Predecessors | Total slack | Constraint | Resources | Work | 最终交付物 |
| --- | --- | --- | --- | --- | --- | --- | --- | --- | --- | --- | --- | --- |
| 112 | 1.5.3 | **需求第三次迭代** |  | 5.5d? | 2021-05-18 | 2021-05-26 | 90 |  |  |  | 226h |  |
| 113 | 1.5.3.1 | **需求获取** |  | 2h? | 2021-05-18 | 2021-05-18 |  |  |  |  | 8h |  |
| 114 | 1.5.3.1.1 | 用户访谈 |  | 1d? | 2021-05-18 | 2021-05-18 | 90 | 0.25d | start no earlier than 2021-05-18 | G11小组 | 8h |  |
| 115 | 1.5.3.2 | **需求分析** |  | 4.25d? | 2021-05-19 | 2021-05-22 | 113 |  |  |  | 98h |  |
| 116 | 1.5.3.2.1 | G11小组例会 |  | 2h | 2021-05-19 | 2021-05-19 |  | 10.5d | start no earlier than 2021-05-19 | 黄文涛 | 2h |  |
| 117 | 1.5.3.2.2 | 更新需求建模 |  | 2d? | 2021-05-19 | 2021-05-20 | 114 | 0.25d |  | 张景雄 | 16h |  |
| 118 | 1.5.3.2.3 | 更新需求细化 |  | 1d? | 2021-05-19 | 2021-05-19 | 114 | 0.5d |  | 伊君琛 | 8h |  |
| 119 | 1.5.3.2.4 | 原型更新 |  | 2d? | 2021-05-19 | 2021-05-20 | 114 | 0.75d |  | 梅一枝; 沈瑞杰 | 32h | 界面原型 |
| 120 | 1.5.3.2.5 | 数据字典更新 |  | 2d? | 2021-05-21 | 2021-05-22 | 117, 118 | 0.25d |  | 黄文涛; 张景雄 | 32h | 数据字典 |
| 121 | 1.5.3.2.6 | 子系统更新 |  | 1d? | 2021-05-21 | 2021-05-21 | 117, 118 | 0.5d |  | 伊君琛 | 8h |  |
| 122 | 1.5.3.3 | G11小组例会 |  | 1d? | 2021-05-21 | 2021-05-21 | 117, 118 | 10d | start no earlier than 2021-05-12 | G11小组 | 8h |  |
| 123 | 1.5.3.4 | 更新需求规格说明书 | milestone | 1d? | 2021-05-23 | 2021-05-23 | 115 | 0.75d |  | G11小组 | 8h | 《需求规格说明书》（修订版） |
| 124 | 1.5.3.5 | **需求验证** |  | 0.5d? | 2021-05-23 | 2021-05-25 | 115 | 0.25d |  |  | 56h |  |
| 125 | 1.5.3.5.1 | 测试需求 |  | 2d? | 2021-05-23 | 2021-05-24 | 118 | 0.25d |  | G11小组 | 16h |  |
| 126 | 1.5.3.5.2 | 原型修改 |  | 2d? | 2021-05-23 | 2021-05-24 | 119 | 0.25d |  | 梅一枝; 沈瑞杰 | 32h | 界面原型 |
| 127 | 1.5.3.5.3 | 原型确认 |  | 1d? | 2021-05-25 | 2021-05-25 | 126 | 0.25d |  | G11小组 | 8h |  |
| 128 | 1.5.3.6 | **需求管理** |  | 0d? | 2021-05-25 | 2021-05-25 | 125 | 0.25d |  |  | 40h |  |
| 129 | 1.5.3.6.1 | 更新需求基线 |  | 1d? | 2021-05-25 | 2021-05-25 | 125 | 0.25d |  | 梅一枝 | 8h |  |
| 130 | 1.5.3.6.2 | 更新需求跟踪信息 |  | 1d? | 2021-05-25 | 2021-05-25 | 125 | 0.25d |  | 黄文涛 | 8h |  |
| 131 | 1.5.3.6.3 | 后向跟踪 |  | 1d? | 2021-05-25 | 2021-05-25 | 125 | 0.25d |  | 沈瑞杰 | 8h |  |
| 132 | 1.5.3.6.4 | 前向跟踪 |  | 1d? | 2021-05-25 | 2021-05-25 | 125 | 0.25d |  | 张景雄 | 8h |  |
| 133 | 1.5.3.6.5 | 更新变更控制 |  | 1d? | 2021-05-25 | 2021-05-25 | 125 | 0.25d |  | 伊君琛 | 8h |  |
| 134 | 1.5.3.7 | G11小组第十六次会议 |  | 1d? | 2021-05-26 | 2021-05-26 | 128 | 8.75d | start no earlier than 2021-05-05 | G11小组 | 8h |  |
| 135 | 1.5.4 | **需求第四次迭代** |  | 5.25d? | 2021-05-27 | 2021-06-03 | 112 |  |  |  | 226h |  |
| 136 | 1.5.4.1 | **需求获取** |  | 2h? | 2021-05-27 | 2021-05-27 |  |  |  |  | 8h |  |
| 137 | 1.5.4.1.1 | 用户访谈 |  | 1d? | 2021-05-27 | 2021-05-27 | 112 | 0d |  | G11小组 | 8h |  |

| ID | WBS | Task | Type | Duration | Start | Finish | Predecessors | Total slack | Free slack | Constraint | Resources | Work | 最终交付物 |
| --- | --- | --- | --- | --- | --- | --- | --- | --- | --- | --- | --- | --- | --- |
| 138 | 1.5.4.2 | **需求分析** |  | 1d? | 2021-05-27 | 2021-05-31 | 136 | 0d |  |  |  | 106h |  |
| 139 | 1.5.4.2.1 | 更新需求建模 |  | 2d? | 2021-05-28 | 2021-05-29 | 137 | 0d |  |  | 张景雄 | 16h |  |
| 140 | 1.5.4.2.2 | 更新需求细化 |  | 1d? | 2021-05-28 | 2021-05-28 | 137 | 0.25d |  |  | 黄文涛; 伊君琛 | 16h |  |
| 141 | 1.5.4.2.3 | 原型更新 |  | 2d? | 2021-05-28 | 2021-05-29 | 137 | 0.5d |  |  | 梅一枝; 沈瑞杰 | 32h | 界面原型 |
| 142 | 1.5.4.2.4 | G11小组例会 |  | 2h | 2021-05-27 | 2021-05-27 |  | 1d |  | start no earlier than 2021-05-19 | 黄文涛 | 2h |  |
| 143 | 1.5.4.2.5 | 数据字典更新 |  | 2d? | 2021-05-30 | 2021-05-31 | 139, 140 | 0d |  |  | 黄文涛; 张景雄 | 32h | 数据字典 |
| 144 | 1.5.4.2.6 | 子系统更新 |  | 1d? | 2021-05-30 | 2021-05-30 | 139, 140 | 0.25d |  |  | 伊君琛 | 8h |  |
| 145 | 1.5.4.3 | 更新需求规格说明书 | milestone | 1d? | 2021-06-01 | 2021-06-01 | 138 | 0.25d |  |  | G11小组 | 8h | 《需求规格说明书》（修订版） |
| 146 | 1.5.4.4 | **需求验证** |  | 0.5d? | 2021-06-01 | 2021-06-03 | 138 | 0d |  |  |  | 64h |  |
| 147 | 1.5.4.4.1 | 测试需求 |  | 2d? | 2021-06-01 | 2021-06-02 | 140 | 0d |  |  | G11小组 | 16h |  |
| 148 | 1.5.4.4.2 | 原型修改 |  | 2d? | 2021-06-01 | 2021-06-02 | 141 | 0d |  |  | 梅一枝; 沈瑞杰 | 32h | 界面原型 |
| 149 | 1.5.4.4.3 | G11小组例会 |  | 1d? | 2021-06-02 | 2021-06-02 | 145 | 0.25d |  | start no earlier than 2021-05-12 | 黄文涛 | 8h |  |
| 150 | 1.5.4.4.4 | 原型确认 |  | 1d? | 2021-06-03 | 2021-06-03 | 148 | 0d |  |  | G11小组 | 8h |  |
| 151 | 1.5.4.5 | **需求管理** |  | 0d? | 2021-06-03 | 2021-06-03 | 147 | 0d |  |  |  | 40h |  |
| 152 | 1.5.4.5.1 | 更新需求基线 |  | 1d? | 2021-06-03 | 2021-06-03 | 147 | 0d |  |  | 梅一枝 | 8h |  |
| 153 | 1.5.4.5.2 | 更新需求跟踪信息 |  | 1d? | 2021-06-03 | 2021-06-03 | 147 | 0d |  |  | 黄文涛 | 8h |  |
| 154 | 1.5.4.5.3 | 后向跟踪 |  | 1d? | 2021-06-03 | 2021-06-03 | 147 | 0d |  |  | 沈瑞杰 | 8h |  |
| 155 | 1.5.4.5.4 | 前向跟踪 |  | 1d? | 2021-06-03 | 2021-06-03 | 147 | 0d |  |  | 张景雄 | 8h |  |
| 156 | 1.5.4.5.5 | 更新变更控制 |  | 1d? | 2021-06-03 | 2021-06-03 | 147 | 0d |  |  | 伊君琛 | 8h |  |
| 157 | 1.5.5 | **需求第五次迭代** |  | 5.25d? | 2021-06-04 | 2021-06-11 | 135 |  |  |  |  | 224h |  |
| 158 | 1.5.5.1 | **需求获取** |  | 2h? | 2021-06-04 | 2021-06-04 |  |  |  |  |  | 8h |  |
| 159 | 1.5.5.1.1 | 用户访谈 |  | 1d? | 2021-06-04 | 2021-06-04 | 135 | 0.75d | 0.25d |  | G11小组 | 8h |  |
| 160 | 1.5.5.2 | **需求分析** |  | 0.75d? | 2021-06-05 | 2021-06-08 | 158 | 0.75d | 0.25d |  |  | 104h |  |
| 161 | 1.5.5.2.1 | 更新需求建模 |  | 2d? | 2021-06-05 | 2021-06-06 | 159 | 0.75d | 0.25d |  | 张景雄 | 16h |  |
| 162 | 1.5.5.2.2 | 更新需求细化 |  | 1d? | 2021-06-05 | 2021-06-05 | 159 | 1d | 0.5d |  | 伊君琛 | 8h |  |
| 163 | 1.5.5.2.3 | G11小组例会 |  | 1d? | 2021-06-05 | 2021-06-05 | 159 | 1.5d |  | start no earlier than 2021-05-16 | 黄文涛 | 8h |  |
| 164 | 1.5.5.2.4 | 原型更新 |  | 2d? | 2021-06-05 | 2021-06-06 | 159 | 1.25d | 0.75d |  | 梅一枝; 沈瑞杰 | 32h | 界面原型 |
| 165 | 1.5.5.2.5 | 数据字典更新 |  | 2d? | 2021-06-07 | 2021-06-08 | 161, 162 | 0.75d |  |  | 黄文涛; 张景雄 | 32h | 数据字典 |
| 166 | 1.5.5.2.6 | 子系统更新 |  | 1d? | 2021-06-07 | 2021-06-07 | 161, 162 | 1d |  |  | 伊君琛 | 8h |  |
| 167 | 1.5.5.3 | G11小组例会 |  | 1d? | 2021-06-09 | 2021-06-09 | 160 | 1.25d |  |  | 黄文涛 | 8h |  |
| 168 | 1.5.5.4 | 更新需求规格说明书 | milestone | 1d? | 2021-06-09 | 2021-06-09 | 160 | 1.25d |  |  | G11小组 | 8h | 《需求规格说明书》（修订版） |

| ID | WBS | Task | Type | Duration | Start | Finish | Predecessors | Total slack | Free slack | Constraint | Resources | Work | 最终交付物 |
| --- | --- | --- | --- | --- | --- | --- | --- | --- | --- | --- | --- | --- | --- |
| 169 | 1.5.5.5 | **需求验证** |  | 0.5d? | 2021-06-09 | 2021-06-11 | 160 | 0.75d |  |  |  | 56h |  |
| 170 | 1.5.5.5.1 | 测试需求 |  | 2d? | 2021-06-09 | 2021-06-10 | 162 | 0.75d | 0.25d |  | G11小组 | 16h |  |
| 171 | 1.5.5.5.2 | 原型修改 |  | 2d? | 2021-06-09 | 2021-06-10 | 164 | 0.75d | 0.25d |  | 梅一枝; 沈瑞杰 | 32h | 界面原型 |
| 172 | 1.5.5.5.3 | 原型确认 |  | 1d? | 2021-06-11 | 2021-06-11 | 171 | 0.75d | 0.25d |  | G11小组 | 8h |  |
| 173 | 1.5.5.6 | **需求管理** |  | 0d? | 2021-06-11 | 2021-06-11 | 170 | 0.75d |  |  |  | 40h |  |
| 174 | 1.5.5.6.1 | 更新需求基线 |  | 1d? | 2021-06-11 | 2021-06-11 | 170 | 0.75d |  |  | 梅一枝 | 8h |  |
| 175 | 1.5.5.6.2 | 跟新需求跟踪信息 |  | 1d? | 2021-06-11 | 2021-06-11 | 170 | 0.75d |  |  | 黄文涛 | 8h |  |
| 176 | 1.5.5.6.3 | 后向跟踪 |  | 1d? | 2021-06-11 | 2021-06-11 | 170 | 0.75d |  |  | 沈瑞杰 | 8h |  |
| 177 | 1.5.5.6.4 | 前向跟踪 |  | 1d? | 2021-06-11 | 2021-06-11 | 170 | 0.75d |  |  | 张景雄 | 8h |  |
| 178 | 1.5.5.6.5 | 更新变更控制 |  | 1d? | 2021-06-11 | 2021-06-11 | 170 | 0.75d |  |  | 伊君琛 | 8h |  |
| 179 | 1.6 | **设计与开发阶段** |  | 2d? | 2021-06-12 | 2021-06-20 | 157 | 0.75d |  |  |  | 226h |  |
| 180 | 1.6.1 | **需求变更（延期概要设计）** |  | 1d? | 2021-06-12 | 2021-06-16 |  | 0.75d | 0.25d |  |  | 114h |  |
| 181 | 1.6.1.1 | 访谈确认变更点 |  | 1d? | 2021-06-12 | 2021-06-12 | 172 | 0.75d | 0.25d |  | G11小组 | 8h |  |
| 182 | 1.6.1.2 | G11小组例会 |  | 2h | 2021-06-12 | 2021-06-12 |  | 1.75d |  | finish no earlier than 2021-06-02 | 黄文涛 | 2h |  |
| 183 | 1.6.1.3 | 导入需求至需求管理工具 |  | 1d? | 2021-06-13 | 2021-06-13 | 181 | 0.75d | 0.25d |  | 黄文涛 | 8h |  |
| 184 | 1.6.1.4 | 需求影响分析报告 | milestone | 2d | 2021-06-13 | 2021-06-14 | 181 | 1.25d |  |  | 伊君琛; 张景雄 | 32h | 《需求分析报告》 |
| 185 | 1.6.1.5 | 导入界面原型至需求管理工具 |  | 1d? | 2021-06-13 | 2021-06-13 | 181 | 0.75d | 0.25d |  | 梅一枝; 沈瑞杰 | 16h |  |
| 186 | 1.6.1.6 | 导入测试用例至需求管理工具 |  | 1d? | 2021-06-13 | 2021-06-13 | 181 | 0.75d | 0.25d |  | 张景雄 | 8h |  |
| 187 | 1.6.1.7 | 需求管理工具中评价工作量 |  | 1d? | 2021-06-14 | 2021-06-14 | 183, 185, 186 | 0.75d | 0.25d |  | 伊君琛 | 8h |  |
| 188 | 1.6.1.8 | 访谈确认变更 |  | 1d? | 2021-06-15 | 2021-06-15 | 187 | 0.75d | 0.25d |  | G11小组 | 8h |  |
| 189 | 1.6.1.9 | G11小组例会 |  | 1d? | 2021-06-16 | 2021-06-16 | 188 | 0.75d |  |  | 黄文涛 | 8h |  |
| 190 | 1.6.1.10 | 修订文档 | milestone | 1d? | 2021-06-16 | 2021-06-16 | 188 | 0.75d | 0.25d |  | 伊君琛; 张景雄 | 16h |  |
| 191 | 1.6.2 | **概要设计** |  | 0.5d? | 2021-06-17 | 2021-06-19 | 180 | 0.75d |  |  |  | 56h |  |
| 192 | 1.6.2.1 | 设计数据库 |  | 1d? | 2021-06-17 | 2021-06-17 | 190 | 0.75d | 0.25d |  | 黄文涛 | 8h | 《数据库设计说明》 |
| 193 | 1.6.2.2 | 体系结构设计 |  | 1d? | 2021-06-17 | 2021-06-17 | 190 | 0.75d | 0.25d |  | 伊君琛; 张景雄 | 16h |  |
| 194 | 1.6.2.3 | 编写概要设计文档 | milestone | 2d? | 2021-06-18 | 2021-06-19 | 192, 193 | 2.75d |  |  | 梅一枝 | 16h | 《概要设计》 |
| 195 | 1.6.2.4 | 编写测试计划 |  | 2d? | 2021-06-18 | 2021-06-19 | 192, 193 | 2.75d |  |  | 沈瑞杰 | 16h | 《测试计划》 |

| ID | WBS | Task | Type | Duration | Start | Finish | Predecessors | Total slack | Free slack | Constraint | Resources | Work | 最终交付物 |
| --- | --- | --- | --- | --- | --- | --- | --- | --- | --- | --- | --- | --- | --- |
| 196 | 1.6.3 | **详细设计** |  | 0.25d? | 2021-06-18 | 2021-06-19 | 190 | 0.75d | 0.25d |  |  | 40h |  |
| 197 | 1.6.3.1 | 编写接口文档 | milestone | 1d? | 2021-06-18 | 2021-06-18 | 192, 193 | 1d |  |  | 黄文涛 | 8h | 《接口设计》 |
| 198 | 1.6.3.2 | 编写详细设计文档 |  | 2d? | 2021-06-18 | 2021-06-19 | 192, 193 | 0.75d |  |  | 伊君琛; 张景雄 | 32h | 《详细设计》 |
| 199 | 1.6.4 | G11小组例会 |  | 1d? | 2021-06-12 | 2021-06-12 |  | 4.5d |  | start no earlier than 2021-06-09 | 黄文涛 | 8h |  |
| 200 | 1.6.5 | 整合设计文档 | milestone | 1d? | 2021-06-20 | 2021-06-20 | 196 | 0.75d | 0d | start no earlier than 2021-06-09 | G11小组 | 8h | 《项目设计报告》 |
| 201 | 1.7 | **实现、测试阶段** |  | 4.75d? | 2021-06-15 | 2021-06-20 | 200 |  |  |  |  | 116h |  |
| 202 | 1.7.1 | 客户端编码 |  | 2d? | 2021-06-21 | 2021-06-22 | 200 | 0.75d | 0.25d |  | 梅一枝; 沈瑞杰 | 32h |  |
| 203 | 1.7.2 | 后端编码 |  | 2d? | 2021-06-21 | 2021-06-22 | 200 | 0.75d | 0.25d |  | 黄文涛; 张景雄 | 32h |  |
| 204 | 1.7.3 | 管理员端编码 |  | 2d? | 2021-06-21 | 2021-06-22 | 200 | 0.75d | 0.25d |  | 伊君琛 | 16h |  |
| 205 | 1.7.4 | G11小组例会 |  | 2h | 2021-06-16 | 2021-06-16 |  | 3.5d |  | start no earlier than 2021-06-16 | G11小组 | 2h |  |
| 206 | 1.7.5 | 单元测试 |  | 2d | 2021-06-23 | 2021-06-24 | 202, 203, 204 | 0.75d | 0.25d |  | G11小组 | 16h |  |
| 207 | 1.7.6 | 集成测试 |  | 2d | 2021-06-25 | 2021-06-26 | 206 | 0.75d |  |  | G11小组 | 16h |  |
| 208 | 1.7.7 | G11小组例会 |  | 2h | 2021-06-20 | 2021-06-20 |  | 2.5d |  | start no earlier than 2021-06-20 | 黄文涛 | 2h |  |
| 209 | 1.8 | 项目收尾 | milestone | 1d? | 2021-06-21 | 2021-06-21 | 201 | 2.25d |  |  | G11小组 | 8h |  |
