# SRA2021-G11-项目计划v0.0.1

Schedule from MS Project, 2021-03-11 to 2021-06-11, A marks actual dates.

## Calendars

- 标准: Mon-Sun 08:00-12:00, 13:00-17:00.

## Resources

| Resource |
| --- |
| 黄文涛 |
| 张景雄 |
| 伊君琛 |
| 沈瑞杰 |
| 梅一枝 |
| G11小组 |

## Schedule

| ID | WBS | Task | Type | Duration | Start | Finish | Predecessors | Complete | Remaining | Total slack | Free slack | Constraint | Resources | Work | Actual work | 最终交付物 |
| --- | --- | --- | --- | --- | --- | --- | --- | --- | --- | --- | --- | --- | --- | --- | --- | --- |
| 1 | 1 | **渔乎APP项目开发** |  | 92d? | 2021-03-11 A | 2021-06-10 |  | 3% | 89.35d? | 1d |  |  |  | 2160h | 8h |  |
| 2 | 1.1 | **前期准备** |  | 1d? | 2021-03-11 A | 2021-03-11 A |  | 100% |  |  |  |  | G11小组 | 8h | 8h |  |
| 3 | 1.1.1 | 确定小组成员 |  | 1d? | 2021-03-11 A | 2021-03-11 A |  | 100% |  |  |  |  |  |  |  |  |
| 4 | 1.1.2 | G11小组成立 |  | 1d? | 2021-03-11 A | 2021-03-11 A |  | 100% |  |  |  |  |  |  |  |  |
| 5 | 1.1.3 | 确定待开发项目 |  | 1d? | 2021-03-11 A | 2021-03-11 A |  | 100% |  |  |  |  |  |  |  |  |
| 6 | 1.1.4 | G11小组第一次例会 |  | 1d? | 2021-03-11 A | 2021-03-11 A |  | 100% |  |  |  |  |  |  |  |  |
| 7 | 1.1.5 | 软件环境配置 |  | 1d? | 2021-03-11 A | 2021-03-11 A |  | 100% |  |  |  |  |  |  |  |  |
| 8 | 1.1.6 | 确定成员大致分工 |  | 1d? | 2021-03-11 A | 2021-03-11 A |  | 100% |  |  |  | start no earlier than 2021-03-11 |  |  |  |  |
| 9 | 1.2 | **可行性分析** |  | 2d? | 2021-03-12 | 2021-03-13 | 2 |  |  | 89d | 0d |  |  | 56h |  |  |
| 10 | 1.2.1 | 进一步研究问题 |  | 1d? | 2021-03-12 | 2021-03-12 |  |  |  | 76d | 0d |  | G11小组 | 8h |  |  |
| 11 | 1.2.2 | 经济可行性分析 |  | 1d? | 2021-03-13 | 2021-03-13 | 10 |  |  | 76d |  |  | 沈瑞杰 | 8h |  |  |
| 12 | 1.2.3 | 技术可行性分析 |  | 1d? | 2021-03-12 | 2021-03-12 |  |  |  | 77d | 0d |  | 沈瑞杰 | 8h |  |  |
| 13 | 1.2.4 | 操作可行性分析 |  | 1d? | 2021-03-13 | 2021-03-13 | 10 |  |  | 76d |  |  | 伊君琛 | 8h |  |  |
| 14 | 1.2.5 | 法律可行性分析 |  | 1d? | 2021-03-12 | 2021-03-12 |  |  |  | 110d |  |  | 伊君琛 | 8h |  |  |
| 15 | 1.2.6 | 整合可行性分析报告 | milestone | 1d? | 2021-03-13 | 2021-03-13 | 14, 12 |  |  | 77d |  | start no earlier than 2021-03-13 | 沈瑞杰; 伊君琛 | 16h |  | 《可行性分析报告》 |
| 16 | 1.3 | **项目开发计划** |  | 2d? | 2021-03-12 | 2021-03-13 | 2 |  |  | 2d | 0d |  |  | 80h |  |  |
| 17 | 1.3.1 | 明确成员分工 |  | 1d? | 2021-03-12 | 2021-03-12 | 2 |  |  | 77d |  |  | 黄文涛 | 8h |  |  |
| 18 | 1.3.2 | 编排甘特图 |  | 2d? | 2021-03-12 | 2021-03-13 | 2 |  |  | 77d |  | start no earlier than 2021-03-12 | 梅一枝 | 16h |  |  |
| 19 | 1.3.3 | 编写项目开发计划、项目章程 |  | 1d? | 2021-03-12 | 2021-03-12 | 2 |  |  | 2d | 0d | finish no earlier than 2021-03-12 | 黄文涛; 张景雄 | 16h |  |  |
| 20 | 1.3.4 | 风险管理计划 |  | 1d? | 2021-03-12 | 2021-03-12 | 2 |  |  | 77d |  |  | 黄文涛 | 8h |  | 《风险管理计划》 |
| 21 | 1.3.5 | 配置管理计划 |  | 1d? | 2021-03-12 | 2021-03-12 | 2 |  |  | 77d |  |  | 张景雄 | 8h |  | 《配置管理计划》 |
| 22 | 1.3.6 | 质量保证计划 |  | 1d? | 2021-03-12 | 2021-03-12 | 2 |  |  | 77d |  |  | 张景雄 | 8h |  | 《质量保证计划》 |
| 23 | 1.3.7 | 整合项目开发计划 | milestone | 1d? | 2021-03-13 | 2021-03-13 | 19 |  |  | 2d | 0d | start no earlier than 2021-03-13 | 黄文涛; 张景雄 | 16h |  | 《项目开发计划》、《项目章程》 |
| 24 | 1.4 | **项目计划阶段整合** |  | 1d? | 2021-03-14 | 2021-03-14 | 9, 16 |  |  | 89d |  |  |  | 48h |  |  |
| 25 | 1.4.1 | 文档、甘特图修订 |  | 1d? | 2021-03-14 | 2021-03-14 | 16 |  |  | 76d |  |  | 沈瑞杰; 伊君琛; 张景雄 | 24h |  |  |
| 26 | 1.4.2 | ppt制作 |  | 1d? | 2021-03-14 | 2021-03-14 | 16 |  |  | 76d |  |  | 黄文涛; 梅一枝 | 16h |  |  |
| 27 | 1.4.3 | G11小组第二次会议 |  | 1d? | 2021-03-14 | 2021-03-14 | 16 |  |  | 82d |  |  | G11小组 | 8h |  |  |

| ID | WBS | Task | Type | Duration | Start | Finish | Predecessors | Total slack | Free slack | Constraint | Resources | Work | 最终交付物 |
| --- | --- | --- | --- | --- | --- | --- | --- | --- | --- | --- | --- | --- | --- |
| 28 | 1.5 | **软件需求分析** |  | 69d? | 2021-03-14 | 2021-05-21 | 23 | 2d |  |  |  | 1488h |  |
| 29 | 1.5.1 | **需求第一次迭代** |  | 32d? | 2021-03-14 | 2021-04-14 |  | 2d |  |  |  | 528h |  |
| 30 | 1.5.1.1 | **需求获取** |  | 9d? | 2021-03-14 | 2021-03-22 |  | 2d | 0d |  |  | 112h |  |
| 31 | 1.5.1.1.1 | 收集背景资料 |  | 2d | 2021-03-14 | 2021-03-15 |  | 2d | 0d |  | 伊君琛 | 16h |  |
| 32 | 1.5.1.1.2 | 定义项目前景和范围 |  | 1d? | 2021-03-16 | 2021-03-16 | 31 | 2d | 0d |  | 黄文涛; 张景雄 | 16h |  |
| 33 | 1.5.1.1.3 | 选择信息的来源 |  | 2d | 2021-03-17 | 2021-03-18 | 32 | 2d | 0d |  | 梅一枝; 沈瑞杰 | 32h |  |
| 34 | 1.5.1.1.4 | G11小组第三次会议 |  | 1d? | 2021-03-17 | 2021-03-17 | 32 | 7d |  |  | G11小组 | 8h |  |
| 35 | 1.5.1.1.5 | 选择获取方法，执行获取 |  | 2d | 2021-03-19 | 2021-03-20 | 33 | 2d | 0d |  | G11小组 | 16h |  |
| 36 | 1.5.1.1.6 | 记录获取结果 |  | 2d | 2021-03-21 | 2021-03-22 | 35 | 2d | 0d |  | 伊君琛 | 16h |  |
| 37 | 1.5.1.1.7 | G11小组第四次会议 |  | 1d? | 2021-03-21 | 2021-03-21 | 35 | 3d |  |  | G11小组 | 8h |  |
| 38 | 1.5.1.2 | **需求分析** |  | 17d? | 2021-03-23 | 2021-04-08 | 36 | 2d | 0d |  |  | 272h |  |
| 39 | 1.5.1.2.1 | 背景分析 |  | 1d | 2021-03-23 | 2021-03-23 | 30 | 2d | 0d |  | G11小组 | 8h |  |
| 40 | 1.5.1.2.2 | 确定系统边界 |  | 1d | 2021-03-24 | 2021-03-24 | 39 | 2d | 0d |  | 黄文涛 | 8h |  |
| 41 | 1.5.1.2.3 | G11小组第五次会议 |  | 1d? | 2021-03-24 | 2021-03-24 | 39 | 17d |  |  | G11小组 | 8h |  |
| 42 | 1.5.1.2.4 | 需求建模 |  | 3d | 2021-03-25 | 2021-03-27 | 40 | 2d | 0d |  | 伊君琛; 张景雄 | 48h |  |
| 43 | 1.5.1.2.5 | 需求细化 |  | 1d? | 2021-03-28 | 2021-03-28 | 42 | 2d | 0d |  | 黄文涛; 伊君琛; 沈瑞杰 | 24h |  |
| 44 | 1.5.1.2.6 | 确定优先级 |  | 1d? | 2021-03-29 | 2021-03-29 | 43 | 2d | 0d |  | 黄文涛 | 8h |  |
| 45 | 1.5.1.2.7 | 需求协商 |  | 3d | 2021-03-30 | 2021-04-01 | 44 | 2d | 0d |  | G11小组 | 24h |  |
| 46 | 1.5.1.2.8 | G11小组第六次会议 |  | 1d? | 2021-03-28 | 2021-03-28 | 42 | 13d |  |  | G11小组 | 8h |  |
| 47 | 1.5.1.2.9 | 原型开发 | milestone | 6d? | 2021-04-02 | 2021-04-07 | 45 | 2d | 0d |  | 梅一枝; 沈瑞杰 | 96h | 界面原型 |
| 48 | 1.5.1.2.10 | 数据字典创建 | milestone | 1d? | 2021-04-02 | 2021-04-02 | 45 | 8d |  |  | 黄文涛; 张景雄 | 16h | 数据字典 |
| 49 | 1.5.1.2.11 | 原型确认 |  | 1d? | 2021-04-08 | 2021-04-08 | 47 | 2d |  |  |  |  |  |
| 50 | 1.5.1.2.12 | 建立子系统 |  | 1d? | 2021-04-02 | 2021-04-02 | 45 | 8d |  |  | 伊君琛 | 8h |  |
| 51 | 1.5.1.2.13 | G11小组第七次会议 |  | 1d? | 2021-03-31 | 2021-03-31 |  | 10d |  | start no earlier than 2021-03-31 | G11小组 | 8h |  |
| 52 | 1.5.1.2.14 | G11小组第八次会议 |  | 1d? | 2021-04-07 | 2021-04-07 |  | 3d |  | start no earlier than 2021-04-07 | G11小组 | 8h |  |
| 53 | 1.5.1.3 | 编写需求规格说明书 | milestone | 3d | 2021-04-09 | 2021-04-11 | 38 | 2d | 0d |  | G11小组 | 24h | 《需求规格说明书》 |
| 54 | 1.5.1.4 | G11小组第九次会议 |  | 1d? | 2021-04-11 | 2021-04-11 |  | 56d |  | start no earlier than 2021-04-11 | G11小组 | 8h |  |

| ID | WBS | Task | Type | Duration | Start | Finish | Predecessors | Total slack | Free slack | Constraint | Resources | Work | 最终交付物 |
| --- | --- | --- | --- | --- | --- | --- | --- | --- | --- | --- | --- | --- | --- |
| 55 | 1.5.1.5 | **需求验证** |  | 2d? | 2021-04-12 | 2021-04-13 | 53 | 2d |  |  |  | 32h |  |
| 56 | 1.5.1.5.1 | 测试需求 |  | 1d? | 2021-04-12 | 2021-04-12 |  | 2d | 0d |  | G11小组 | 8h |  |
| 57 | 1.5.1.5.2 | 原型修改 |  | 1d? | 2021-04-12 | 2021-04-12 |  | 54d | 0d |  | 梅一枝; 沈瑞杰 | 16h | 界面原型 |
| 58 | 1.5.1.5.3 | 原型确认 |  | 1d? | 2021-04-13 | 2021-04-13 | 57 | 54d |  |  | G11小组 | 8h |  |
| 59 | 1.5.1.6 | **需求管理** |  | 6d? | 2021-04-09 | 2021-04-14 | 38 | 2d | 0d |  |  | 80h |  |
| 60 | 1.5.1.6.1 | **建立需求基线** |  | 5d? | 2021-04-09 | 2021-04-13 | 38 | 2d | 0d |  |  | 24h |  |
| 61 | 1.5.1.6.1.1 | 更新需求优先级 |  | 1d? | 2021-04-09 | 2021-04-09 | 45 | 6d |  |  | 梅一枝 | 8h |  |
| 62 | 1.5.1.6.1.2 | 工作量估算 |  | 1d? | 2021-04-09 | 2021-04-09 | 45 | 6d | 0d |  | 黄文涛 | 8h |  |
| 63 | 1.5.1.6.1.3 | 未完成项合并 |  | 1d? | 2021-04-13 | 2021-04-13 | 56 | 2d |  |  | 伊君琛 | 8h |  |
| 64 | 1.5.1.6.2 | 建立需求跟踪信息 |  | 1d? | 2021-04-10 | 2021-04-10 | 62 | 6d |  |  | 黄文涛 | 8h |  |
| 65 | 1.5.1.6.3 | 后向跟踪 |  | 1d? | 2021-04-13 | 2021-04-13 | 56 | 3d |  |  | 沈瑞杰 | 8h |  |
| 66 | 1.5.1.6.4 | 前向跟踪 |  | 1d? | 2021-04-13 | 2021-04-13 | 56 | 3d |  |  | 张景雄 | 8h |  |
| 67 | 1.5.1.6.5 | G11小组第十次会议 |  | 1d? | 2021-04-14 | 2021-04-14 | 60 | 2d |  |  | G11小组 | 8h |  |
| 68 | 1.5.1.6.6 | **进行变更控制** |  | 1d? | 2021-04-14 | 2021-04-14 | 60 | 2d | 0d |  |  | 24h |  |
| 69 | 1.5.1.6.6.1 | 业务影响分析 |  | 1d? | 2021-04-14 | 2021-04-14 | 60 | 2d |  |  | 黄文涛 | 8h |  |
| 70 | 1.5.1.6.6.2 | 技术影响分析 |  | 1d? | 2021-04-14 | 2021-04-14 | 60 | 2d |  |  | 沈瑞杰 | 8h |  |
| 71 | 1.5.1.6.6.3 | 项目影响分析 |  | 1d? | 2021-04-14 | 2021-04-14 | 60 | 2d |  |  | 张景雄 | 8h |  |
| 72 | 1.5.2 | **需求第二次迭代** |  | 10d? | 2021-04-15 | 2021-04-24 | 68 | 2d | 0d |  |  | 248h |  |
| 73 | 1.5.2.1 | **需求获取** |  | 1d? | 2021-04-15 | 2021-04-15 |  | 2d | 0d |  |  | 8h |  |
| 74 | 1.5.2.1.1 | 用户访谈 |  | 1d? | 2021-04-15 | 2021-04-15 | 59 | 2d | 0d |  | G11小组 | 8h |  |
| 75 | 1.5.2.2 | **需求分析** |  | 4d? | 2021-04-16 | 2021-04-19 | 73 | 2d | 0d |  |  | 112h |  |
| 76 | 1.5.2.2.1 | 更新需求建模 |  | 1d? | 2021-04-16 | 2021-04-16 | 74 | 3d | 1d |  | 张景雄 | 8h |  |
| 77 | 1.5.2.2.2 | 更新需求细化 |  | 2d? | 2021-04-16 | 2021-04-17 | 74 | 2d | 0d |  | 黄文涛; 伊君琛 | 32h |  |
| 78 | 1.5.2.2.3 | 原型更新 |  | 2d? | 2021-04-16 | 2021-04-17 | 74 | 4d |  |  | 梅一枝; 沈瑞杰 | 32h | 界面原型 |
| 79 | 1.5.2.2.4 | 数据字典更新 |  | 2d? | 2021-04-18 | 2021-04-19 | 77, 76 | 2d |  |  | 黄文涛; 张景雄 | 32h | 数据字典 |
| 80 | 1.5.2.2.5 | 子系统更新 |  | 1d? | 2021-04-18 | 2021-04-18 | 77, 76 | 3d |  |  | 伊君琛 | 8h |  |
| 81 | 1.5.2.3 | G11小组第十一次会议 |  | 1d? | 2021-04-18 | 2021-04-18 | 77, 76 | 8d |  |  | G11小组 | 8h |  |
| 82 | 1.5.2.4 | 更新需求规格说明书 | milestone | 2d? | 2021-04-20 | 2021-04-21 | 75 | 2d | 0d |  | G11小组 | 16h | 《需求规格说明书》（修订版） |
| 83 | 1.5.2.5 | G11小组第十二次会议 |  | 1d? | 2021-04-21 | 2021-04-21 |  | 5d |  | start no earlier than 2021-04-21 | G11小组 | 8h |  |

| ID | WBS | Task | Type | Duration | Start | Finish | Predecessors | Total slack | Free slack | Constraint | Resources | Work | 最终交付物 |
| --- | --- | --- | --- | --- | --- | --- | --- | --- | --- | --- | --- | --- | --- |
| 84 | 1.5.2.6 | **需求验证** |  | 3d? | 2021-04-22 | 2021-04-24 | 82 | 2d |  |  |  | 56h |  |
| 85 | 1.5.2.6.1 | 测试需求 |  | 2d? | 2021-04-22 | 2021-04-23 | 77 | 2d | 0d |  | G11小组 | 16h |  |
| 86 | 1.5.2.6.2 | 原型修改 |  | 2d? | 2021-04-22 | 2021-04-23 | 78 | 2d | 0d |  | 梅一枝; 沈瑞杰 | 32h | 界面原型 |
| 87 | 1.5.2.6.3 | 原型确认 |  | 1d? | 2021-04-24 | 2021-04-24 | 86 | 2d |  |  | G11小组 | 8h |  |
| 88 | 1.5.2.7 | **需求管理** |  | 1d? | 2021-04-24 | 2021-04-24 | 85 | 2d |  |  |  | 40h |  |
| 89 | 1.5.2.7.1 | 更新需求基线 |  | 1d? | 2021-04-24 | 2021-04-24 | 85 | 2d |  |  | 梅一枝 | 8h |  |
| 90 | 1.5.2.7.2 | 更新需求跟踪信息 |  | 1d? | 2021-04-24 | 2021-04-24 | 85 | 2d |  |  | 黄文涛 | 8h |  |
| 91 | 1.5.2.7.3 | 后向跟踪 |  | 1d? | 2021-04-24 | 2021-04-24 | 85 | 2d |  |  | 沈瑞杰 | 8h |  |
| 92 | 1.5.2.7.4 | 前向跟踪 |  | 1d? | 2021-04-24 | 2021-04-24 | 85 | 2d |  |  | 张景雄 | 8h |  |
| 93 | 1.5.2.7.5 | 更新变更控制 |  | 1d? | 2021-04-24 | 2021-04-24 | 85 | 2d |  |  | 伊君琛 | 8h |  |
| 94 | 1.5.3 | G11小组第十三次会议 |  | 1d? | 2021-04-25 | 2021-04-25 | 72 | 47d |  |  | G11小组 | 8h |  |
| 95 | 1.5.4 | **需求第三次迭代** |  | 11d? | 2021-04-25 | 2021-05-05 | 72 | 0d |  |  |  | 240h |  |
| 96 | 1.5.4.1 | **需求获取** |  | 1d? | 2021-04-25 | 2021-04-25 |  | 2d | 0d |  |  | 8h |  |
| 97 | 1.5.4.1.1 | 用户访谈 |  | 1d? | 2021-04-25 | 2021-04-25 | 72 | 2d | 0d |  | G11小组 | 8h |  |
| 98 | 1.5.4.2 | **需求分析** |  | 4d? | 2021-04-26 | 2021-04-29 | 96 | 2d | 0d |  |  | 104h |  |
| 99 | 1.5.4.2.1 | 更新需求建模 |  | 2d? | 2021-04-26 | 2021-04-27 | 97 | 2d | 0d |  | 张景雄 | 16h |  |
| 100 | 1.5.4.2.2 | 更新需求细化 |  | 1d? | 2021-04-26 | 2021-04-26 | 97 | 3d | 1d |  | 黄文涛; 伊君琛 | 16h |  |
| 101 | 1.5.4.2.3 | 原型更新 |  | 2d? | 2021-04-26 | 2021-04-27 | 97 | 4d | 2d |  | 梅一枝; 沈瑞杰 | 32h | 界面原型 |
| 102 | 1.5.4.2.4 | 数据字典更新 |  | 2d? | 2021-04-28 | 2021-04-29 | 99, 100 | 2d |  |  | 黄文涛; 张景雄 | 32h | 数据字典 |
| 103 | 1.5.4.2.5 | 子系统更新 |  | 1d? | 2021-04-28 | 2021-04-28 | 99, 100 | 3d |  |  | 伊君琛 | 8h |  |
| 104 | 1.5.4.3 | G11小组第十四次会议 |  | 1d? | 2021-04-28 | 2021-04-28 | 99, 100 | 7d |  | start no earlier than 2021-04-28 | G11小组 | 8h |  |
| 105 | 1.5.4.4 | 更新需求规格说明书 | milestone | 1d? | 2021-04-30 | 2021-04-30 | 98 | 5d |  |  | G11小组 | 8h | 《需求规格说明书》（修订版） |
| 106 | 1.5.4.5 | **需求验证** |  | 3d? | 2021-04-30 | 2021-05-02 | 98 | 2d |  |  |  | 56h |  |
| 107 | 1.5.4.5.1 | 测试需求 |  | 2d? | 2021-04-30 | 2021-05-01 | 100 | 2d | 0d |  | G11小组 | 16h |  |
| 108 | 1.5.4.5.2 | 原型修改 |  | 2d? | 2021-04-30 | 2021-05-01 | 101 | 3d | 0d |  | 梅一枝; 沈瑞杰 | 32h | 界面原型 |
| 109 | 1.5.4.5.3 | 原型确认 |  | 1d? | 2021-05-02 | 2021-05-02 | 108 | 3d |  |  | G11小组 | 8h |  |

| ID | WBS | Task | Type | Duration | Start | Finish | Predecessors | Total slack | Free slack | Constraint | Resources | Work | 最终交付物 |
| --- | --- | --- | --- | --- | --- | --- | --- | --- | --- | --- | --- | --- | --- |
| 110 | 1.5.4.6 | **需求管理** |  | 1d? | 2021-05-02 | 2021-05-02 | 107 | 3d |  |  |  | 40h |  |
| 111 | 1.5.4.6.1 | 更新需求基线 |  | 1d? | 2021-05-02 | 2021-05-02 | 107 | 3d |  |  | 梅一枝 | 8h |  |
| 112 | 1.5.4.6.2 | 更新需求跟踪信息 |  | 1d? | 2021-05-02 | 2021-05-02 | 107 | 3d |  |  | 黄文涛 | 8h |  |
| 113 | 1.5.4.6.3 | 后向跟踪 |  | 1d? | 2021-05-02 | 2021-05-02 | 107 | 3d |  |  | 沈瑞杰 | 8h |  |
| 114 | 1.5.4.6.4 | 前向跟踪 |  | 1d? | 2021-05-02 | 2021-05-02 | 107 | 3d |  |  | 张景雄 | 8h |  |
| 115 | 1.5.4.6.5 | 更新变更控制 |  | 1d? | 2021-05-02 | 2021-05-02 | 107 | 3d |  |  | 伊君琛 | 8h |  |
| 116 | 1.5.4.7 | G11小组第十五次会议 |  | 1d? | 2021-05-02 | 2021-05-02 | 107 | 2d |  |  | G11小组 | 8h |  |
| 117 | 1.5.4.8 | G11小组第十六次会议 |  | 1d? | 2021-05-05 | 2021-05-05 | 116 | 0d |  | start no earlier than 2021-05-05 | G11小组 | 8h |  |
| 118 | 1.5.5 | **需求第四次迭代** |  | 8d? | 2021-05-06 | 2021-05-13 | 95 |  |  |  |  | 232h |  |
| 119 | 1.5.5.1 | **需求获取** |  | 1d? | 2021-05-06 | 2021-05-06 |  | 0d |  |  |  | 8h |  |
| 120 | 1.5.5.1.1 | 用户访谈 |  | 1d? | 2021-05-06 | 2021-05-06 | 95 | 0d |  |  | G11小组 | 8h |  |
| 121 | 1.5.5.2 | **需求分析** |  | 4d? | 2021-05-07 | 2021-05-10 | 119 | 0d |  |  |  | 104h |  |
| 122 | 1.5.5.2.1 | 更新需求建模 |  | 2d? | 2021-05-07 | 2021-05-08 | 120 | 0d |  |  | 张景雄 | 16h |  |
| 123 | 1.5.5.2.2 | 更新需求细化 |  | 1d? | 2021-05-07 | 2021-05-07 | 120 | 1d |  |  | 黄文涛; 伊君琛 | 16h |  |
| 124 | 1.5.5.2.3 | 原型更新 |  | 2d? | 2021-05-07 | 2021-05-08 | 120 | 2d |  |  | 梅一枝; 沈瑞杰 | 32h | 界面原型 |
| 125 | 1.5.5.2.4 | 数据字典更新 |  | 2d? | 2021-05-09 | 2021-05-10 | 122, 123 | 0d |  |  | 黄文涛; 张景雄 | 32h | 数据字典 |
| 126 | 1.5.5.2.5 | 子系统更新 |  | 1d? | 2021-05-09 | 2021-05-09 | 122, 123 | 1d |  |  | 伊君琛 | 8h |  |
| 127 | 1.5.5.3 | G11小组第十七次会议 |  | 1d? | 2021-05-09 | 2021-05-09 | 122, 123 | 33d |  | start no earlier than 2021-05-09 | G11小组 | 8h |  |
| 128 | 1.5.5.4 | 更新需求规格说明书 | milestone | 1d? | 2021-05-11 | 2021-05-11 | 121 | 1d | 0d |  | G11小组 | 8h | 《需求规格说明书》（修订版） |
| 129 | 1.5.5.5 | **需求验证** |  | 3d? | 2021-05-11 | 2021-05-13 | 121 | 0d |  |  |  | 64h |  |
| 130 | 1.5.5.5.1 | 测试需求 |  | 2d? | 2021-05-11 | 2021-05-12 | 123 | 0d |  |  | G11小组 | 16h |  |
| 131 | 1.5.5.5.2 | 原型修改 |  | 2d? | 2021-05-11 | 2021-05-12 | 124 | 0d |  |  | 梅一枝; 沈瑞杰 | 32h | 界面原型 |
| 132 | 1.5.5.5.3 | G11小组第十八次会议 |  | 1d? | 2021-05-12 | 2021-05-12 | 128 | 1d |  | start no earlier than 2021-05-12 | G11小组 | 8h |  |
| 133 | 1.5.5.5.4 | 原型确认 |  | 1d? | 2021-05-13 | 2021-05-13 | 131 | 0d |  |  | G11小组 | 8h |  |

| ID | WBS | Task | Type | Duration | Start | Finish | Predecessors | Total slack | Constraint | Resources | Work | 最终交付物 |
| --- | --- | --- | --- | --- | --- | --- | --- | --- | --- | --- | --- | --- |
| 134 | 1.5.5.6 | **需求管理** |  | 1d? | 2021-05-13 | 2021-05-13 | 130 | 0d |  |  | 40h |  |
| 135 | 1.5.5.6.1 | 更新需求基线 |  | 1d? | 2021-05-13 | 2021-05-13 | 130 | 0d |  | 梅一枝 | 8h |  |
| 136 | 1.5.5.6.2 | 更新需求跟踪信息 |  | 1d? | 2021-05-13 | 2021-05-13 | 130 | 0d |  | 黄文涛 | 8h |  |
| 137 | 1.5.5.6.3 | 后向跟踪 |  | 1d? | 2021-05-13 | 2021-05-13 | 130 | 0d |  | 沈瑞杰 | 8h |  |
| 138 | 1.5.5.6.4 | 前向跟踪 |  | 1d? | 2021-05-13 | 2021-05-13 | 130 | 0d |  | 张景雄 | 8h |  |
| 139 | 1.5.5.6.5 | 更新变更控制 |  | 1d? | 2021-05-13 | 2021-05-13 | 130 | 0d |  | 伊君琛 | 8h |  |
| 140 | 1.5.6 | **需求第五次迭代** |  | 8d? | 2021-05-14 | 2021-05-21 | 118 | 0d |  |  | 232h |  |
| 141 | 1.5.6.1 | **需求获取** |  | 1d? | 2021-05-14 | 2021-05-14 |  | 0d |  |  | 8h |  |
| 142 | 1.5.6.1.1 | 用户访谈 |  | 1d? | 2021-05-14 | 2021-05-14 | 118 | 0d |  | G11小组 | 8h |  |
| 143 | 1.5.6.2 | **需求分析** |  | 4d? | 2021-05-15 | 2021-05-18 | 141 | 0d |  |  | 112h |  |
| 144 | 1.5.6.2.1 | 更新需求建模 |  | 2d? | 2021-05-15 | 2021-05-16 | 142 | 0d |  | 张景雄 | 16h |  |
| 145 | 1.5.6.2.2 | 更新需求细化 |  | 1d? | 2021-05-15 | 2021-05-15 | 142 | 1d |  | 黄文涛; 伊君琛 | 16h |  |
| 146 | 1.5.6.2.3 | G11小组第十九次会议 |  | 1d? | 2021-05-16 | 2021-05-16 | 142 | 2d | start no earlier than 2021-05-16 | G11小组 | 8h |  |
| 147 | 1.5.6.2.4 | 原型更新 |  | 2d? | 2021-05-15 | 2021-05-16 | 142 | 2d |  | 梅一枝; 沈瑞杰 | 32h | 界面原型 |
| 148 | 1.5.6.2.5 | 数据字典更新 |  | 2d? | 2021-05-17 | 2021-05-18 | 144, 145 | 0d |  | 黄文涛; 张景雄 | 32h | 数据字典 |
| 149 | 1.5.6.2.6 | 子系统更新 |  | 1d? | 2021-05-17 | 2021-05-17 | 144, 145 | 1d |  | 伊君琛 | 8h |  |
| 150 | 1.5.6.3 | G11小组第二十次会议 |  | 1d? | 2021-05-19 | 2021-05-19 | 143 | 2d |  | G11小组 | 8h |  |
| 151 | 1.5.6.4 | 更新需求规格说明书 | milestone | 1d? | 2021-05-19 | 2021-05-19 | 143 | 2d |  | G11小组 | 8h | 《需求规格说明书》（修订版） |
| 152 | 1.5.6.5 | **需求验证** |  | 3d? | 2021-05-19 | 2021-05-21 | 143 | 0d |  |  | 56h |  |
| 153 | 1.5.6.5.1 | 测试需求 |  | 2d? | 2021-05-19 | 2021-05-20 | 145 | 0d |  | G11小组 | 16h |  |
| 154 | 1.5.6.5.2 | 原型修改 |  | 2d? | 2021-05-19 | 2021-05-20 | 147 | 0d |  | 梅一枝; 沈瑞杰 | 32h | 界面原型 |
| 155 | 1.5.6.5.3 | 原型确认 |  | 1d? | 2021-05-21 | 2021-05-21 | 154 | 0d |  | G11小组 | 8h |  |
| 156 | 1.5.6.6 | **需求管理** |  | 1d? | 2021-05-21 | 2021-05-21 | 153 | 0d |  |  | 40h |  |
| 157 | 1.5.6.6.1 | 更新需求基线 |  | 1d? | 2021-05-21 | 2021-05-21 | 153 | 0d |  | 梅一枝 | 8h |  |
| 158 | 1.5.6.6.2 | 跟新需求跟踪信息 |  | 1d? | 2021-05-21 | 2021-05-21 | 153 | 0d |  | 黄文涛 | 8h |  |
| 159 | 1.5.6.6.3 | 后向跟踪 |  | 1d? | 2021-05-21 | 2021-05-21 | 153 | 0d |  | 沈瑞杰 | 8h |  |
| 160 | 1.5.6.6.4 | 前向跟踪 |  | 1d? | 2021-05-21 | 2021-05-21 | 153 | 0d |  | 张景雄 | 8h |  |
| 161 | 1.5.6.6.5 | 更新变更控制 |  | 1d? | 2021-05-21 | 2021-05-21 | 153 | 0d |  | 伊君琛 | 8h |  |

| ID | WBS | Task | Type | Duration | Start | Finish | Predecessors | Total slack | Constraint | Resources | Work | 最终交付物 |
| --- | --- | --- | --- | --- | --- | --- | --- | --- | --- | --- | --- | --- |
| 162 | 1.6 | **设计与开发阶段** |  | 12d? | 2021-05-22 | 2021-06-02 | 140 | 0d |  |  | 240h |  |
| 163 | 1.6.1 | **需求变更（延期概要设计）** |  | 5d? | 2021-05-22 | 2021-05-26 |  | 0d |  |  | 120h |  |
| 164 | 1.6.1.1 | 访谈确认变更点 |  | 1d? | 2021-05-22 | 2021-05-22 | 155 | 0d |  | G11小组 | 8h |  |
| 165 | 1.6.1.2 | G11小组第二十一次会议 |  | 1d? | 2021-05-23 | 2021-05-23 | 164 | 3d |  | G11小组 | 8h |  |
| 166 | 1.6.1.3 | 导入需求至需求管理工具 |  | 1d? | 2021-05-23 | 2021-05-23 | 164 | 0d |  | 黄文涛 | 8h |  |
| 167 | 1.6.1.4 | 需求影响分析报告 | milestone | 2d | 2021-05-23 | 2021-05-24 | 164 | 2d |  | 伊君琛; 张景雄 | 32h | 《需求分析报告》 |
| 168 | 1.6.1.5 | 导入界面原型至需求管理工具 |  | 1d? | 2021-05-23 | 2021-05-23 | 164 | 0d |  | 梅一枝; 沈瑞杰 | 16h |  |
| 169 | 1.6.1.6 | 导入测试用例至需求管理工具 |  | 1d? | 2021-05-23 | 2021-05-23 | 164 | 0d |  | 张景雄 | 8h |  |
| 170 | 1.6.1.7 | 需求管理工具中评价工作量 |  | 1d? | 2021-05-24 | 2021-05-24 | 166, 168, 169 | 0d |  | 伊君琛 | 8h |  |
| 171 | 1.6.1.8 | 访谈确认变更 |  | 1d? | 2021-05-25 | 2021-05-25 | 170 | 0d |  | G11小组 | 8h |  |
| 172 | 1.6.1.9 | G11小组第二十二次会议 |  | 1d? | 2021-05-26 | 2021-05-26 | 171 | 0d |  | G11小组 | 8h |  |
| 173 | 1.6.1.10 | 修订文档 | milestone | 1d? | 2021-05-26 | 2021-05-26 | 171 | 0d |  | 伊君琛; 张景雄 | 16h |  |
| 174 | 1.6.2 | **概要设计** |  | 3d? | 2021-05-27 | 2021-05-29 | 163 | 0d |  |  | 56h |  |
| 175 | 1.6.2.1 | 设计数据库 |  | 1d? | 2021-05-27 | 2021-05-27 | 173 | 0d |  | 黄文涛 | 8h | 《数据库设计说明》 |
| 176 | 1.6.2.2 | 体系结构设计 |  | 1d? | 2021-05-27 | 2021-05-27 | 173 | 0d |  | 伊君琛; 张景雄 | 16h |  |
| 177 | 1.6.2.3 | 编写概要设计文档 | milestone | 2d? | 2021-05-28 | 2021-05-29 | 175, 176 | 0d |  | 梅一枝 | 16h | 《概要设计》 |
| 178 | 1.6.2.4 | 编写测试计划 |  | 2d? | 2021-05-28 | 2021-05-29 | 175, 176 | 2d |  | 沈瑞杰 | 16h | 《测试计划》 |
| 179 | 1.6.3 | **详细设计** |  | 4d? | 2021-05-28 | 2021-05-31 | 173 | 0d |  |  | 40h |  |
| 180 | 1.6.3.1 | 编写接口文档 | milestone | 1d? | 2021-05-28 | 2021-05-28 | 175, 176 | 3d |  | 黄文涛 | 8h | 《接口设计》 |
| 181 | 1.6.3.2 | 编写详细设计文档 |  | 2d? | 2021-05-30 | 2021-05-31 | 177 | 0d |  | 伊君琛; 张景雄 | 32h | 《详细设计》 |
| 182 | 1.6.4 | G11小组第二十三次会议 |  | 1d? | 2021-05-30 | 2021-05-30 | 174 | 12d |  | G11小组 | 8h |  |
| 183 | 1.6.5 | 整合设计文档 | milestone | 1d? | 2021-06-01 | 2021-06-01 | 174, 179 | 0d |  | G11小组 | 8h | 《项目设计报告》 |
| 184 | 1.6.6 | G11小组第二十四次会议 |  | 1d? | 2021-06-02 | 2021-06-02 | 183 | 9d |  | G11小组 | 8h |  |
| 185 | 1.7 | **实现、测试阶段** |  | 9d? | 2021-06-02 | 2021-06-10 | 183 | 0d |  |  | 240h |  |
| 186 | 1.7.1 | 客户端编码 |  | 5d | 2021-06-02 | 2021-06-06 | 183 | 0d |  | 梅一枝; 沈瑞杰 | 80h |  |
| 187 | 1.7.2 | 后端编码 |  | 5d | 2021-06-02 | 2021-06-06 | 183 | 0d |  | 黄文涛; 张景雄 | 80h |  |
| 188 | 1.7.3 | 管理员端编码 |  | 5d | 2021-06-02 | 2021-06-06 | 183 | 0d |  | 伊君琛 | 40h |  |
| 189 | 1.7.4 | G11小组第二十五次会议 |  | 1d? | 2021-06-06 | 2021-06-06 |  | 4d | start no earlier than 2021-06-06 | G11小组 | 8h |  |
| 190 | 1.7.5 | 单元测试 |  | 2d | 2021-06-07 | 2021-06-08 | 186, 187, 188 | 0d |  | G11小组 | 16h |  |
| 191 | 1.7.6 | 集成测试 |  | 2d | 2021-06-09 | 2021-06-10 | 190 | 0d |  | G11小组 | 16h |  |
| 192 | 2 | 项目收尾 | milestone | 1d? | 2021-06-11 | 2021-06-11 | 185 | 0d |  | G11小组 | 8h |  |
